# Project tasklist

Schedule from MS Project, 2011-04-05 to 2011-07-08, status date 2009-09-01.
FPTSoft

## Calendars

- Standard: Mon-Fri 08:00-12:00, 13:00-17:00; Sat-Sun off.

## Resources

| Resource |
| --- |
| FPT |
| JP |

## Schedule

| ID | WBS | Task | Type | Duration | Start | Finish | Predecessors | Baseline start | Baseline finish | Baseline duration | Total slack | Resources | Work | Baseline cost |
| --- | --- | --- | --- | --- | --- | --- | --- | --- | --- | --- | --- | --- | --- | --- |
| 1 | 1 | **Flexi_Alert_System_Development Plan** |  | 68.5d | 2011-04-05 | 2011-07-08 |  |  |  |  | 0d |  | 828h |  |
| 2 | 1.1 | **Project kick off** |  | 3.5d | 2011-04-05 | 2011-04-08 |  | 2007-06-18 | 2007-06-20 | 2d | 0d |  | 44h | 5,538 |
| 3 | 1.1.1 | Prepare project initial documents |  | 1d | 2011-04-05 | 2011-04-06 |  | 2007-06-18 | 2007-06-20 | 2d | 2.5d | FPT | 8h | 4,800 |
| 4 | 1.1.2 | Overview application |  | 1d | 2011-04-05 | 2011-04-06 |  | 2007-06-18 | 2007-06-18 | 0d | 2.5d | FPT | 8h |  |
| 5 | 1.1.3 | Kick off project |  | 0.5d | 2011-04-05 | 2011-04-05 |  | 2007-06-18 | 2007-06-18 | 0d | 0d | FPT | 4h |  |
| 6 | 1.1.4 | Setup development env. |  | 3d | 2011-04-05 | 2011-04-08 | 5 | 2007-06-18 | 2007-06-18 | 0.5d | 0d | FPT | 24h | 738 |
| 7 | 1.2 | **Requirement & Design** |  | 20d | 2011-04-08 | 2011-05-06 | 2 | 2007-06-18 | 2007-06-21 | 3d | 0d |  | 192h | 7,200 |
| 8 | 1.2.1 | Gather requirement specification |  | 5d | 2011-04-08 | 2011-04-15 |  | 2007-06-18 | 2007-06-21 | 3d | 0d | FPT | 40h | 7,200 |
| 9 | 1.2.2 | Create SRS and Detail Design |  | 10d | 2011-04-15 | 2011-04-29 | 8 |  |  |  | 0d | FPT | 80h |  |
| 10 | 1.2.3 | Review SRS and DD |  | 4d | 2011-04-29 | 2011-05-05 | 9 | 2007-06-21 | 2007-07-03 | 8d | 0d | FPT; JP | 64h | 4,000 |
| 11 | 1.2.4 | Sign-off Detail Design | milestone | 1d | 2011-05-05 | 2011-05-06 | 10 |  |  |  | 45d | JP | 8h |  |
| 12 | 1.3 | **Development & Coding** |  | 21d | 2011-04-29 | 2011-05-30 |  | 2007-06-25 | 2007-07-30 | 25d | 0d |  | 168h | 90,140 |
| 13 | 1.3.1 | Coding development |  | 15d | 2011-04-29 | 2011-05-20 | 10SS |  |  |  | 0d | FPT | 120h |  |
| 14 | 1.3.2 | Integrate system |  | 5d | 2011-05-20 | 2011-05-27 | 13 |  |  |  | 0d | FPT | 40h |  |
| 15 | 1.3.3 | First build | milestone | 1d | 2011-05-27 | 2011-05-30 | 14 | 2007-07-17 | 2007-07-31 | 10d | 29d | FPT | 8h | 31,212 |
| 16 | 1.4 | **Testing & QA** |  | 25d | 2011-04-29 | 2011-06-03 |  |  |  |  | 0d |  | 224h |  |
| 17 | 1.4.1 | Create Test Cases |  | 7d | 2011-04-29 | 2011-05-10 | 10SS |  |  |  | 0d | FPT | 56h |  |
| 18 | 1.4.2 | Review / Update Test Cases |  | 3d | 2011-05-10 | 2011-05-13 | 17 |  |  |  | 0d | FPT; JP | 48h |  |
| 19 | 1.4.3 | Functional testing |  | 10d | 2011-05-13 | 2011-05-27 | 18, 13 |  |  |  | 0d | FPT | 80h |  |
| 20 | 1.4.4 | Intergration testing | milestone | 5d | 2011-05-27 | 2011-06-03 | 14, 19 |  |  |  | 0d | FPT | 40h |  |
| 21 | 1.5 | **SIT** |  | 11d | 2011-06-03 | 2011-06-20 | 16 |  |  |  | 0d |  | 88h |  |
| 22 | 1.5.1 | Packaging and Send for SIT |  | 1d | 2011-06-03 | 2011-06-06 |  |  |  |  | 0d | FPT | 8h |  |
| 23 | 1.5.2 | SIT Bug fixing |  | 10d | 2011-06-06 | 2011-06-20 | 22 |  |  |  | 0d | FPT | 80h |  |
| 24 | 1.6 | **Deployment, UAT and Rollout** |  | 13d | 2011-06-20 | 2011-07-07 | 21 |  |  |  | 0d |  | 104h |  |
| 25 | 1.6.1 | Packaging and Send for UAT | milestone | 1d | 2011-06-20 | 2011-06-21 |  |  |  |  | 0d | FPT | 8h |  |
| 26 | 1.6.2 | UAT support |  | 10d | 2011-06-21 | 2011-07-05 | 25 |  |  |  | 0d | FPT | 80h |  |
| 27 | 1.6.3 | UAT Sign-off and Rollout support | milestone | 2d | 2011-07-05 | 2011-07-07 | 26 |  |  |  | 0d | JP | 16h |  |
| 28 | 1.7 | Final build | milestone | 1d | 2011-07-07 | 2011-07-08 | 27 | 2007-08-13 | 2007-08-13 | 0d | 0d | JP | 8h |  |
