# ShawTrust_SD_Master_Plan_v0.2

Schedule from MS Project, 2011-11-18 to 2012-01-03.
Sony Electronics, Inc.

## Calendars

- Standard: Mon-Fri 08:00-12:00, 13:00-17:00; Sat-Sun off.

## Resources

| Resource |
| --- |
| dungnm |
| hant21 |
| hungnm |
| phongtv |
| nhanld |
| phong |

## Schedule

| ID | WBS | Task | Duration | Start | Finish | Predecessors | Total slack | Resources | Work |
| --- | --- | --- | --- | --- | --- | --- | --- | --- | --- |
| 1 | 1 | **MockProject** | 32.1d | 2011-11-18 08:00 | 2012-01-03 08:48 |  | 0d |  | 1820h |
| 2 | 1.1 | **Initiation** | 1d | 2011-11-18 08:00 | 2011-11-18 17:00 |  | 0d |  |  |
| 3 | 1.1.1 | Project kick-off & introduction | 0.25d | 2011-11-18 08:00 | 2011-11-18 10:00 |  | 0d |  |  |
| 4 | 1.1.2 | Preparation & Study overview requirements | 0.5d | 2011-11-18 10:00 | 2011-11-18 15:00 | 3 | 0d |  |  |
| 5 | 1.1.3 | Requirement brainstorming | 0.25d | 2011-11-18 15:00 | 2011-11-18 17:00 | 4 | 0d |  |  |
| 6 | 1.2 | **Create document & Learning** | 10.1d | 2011-11-21 08:00 | 2011-12-05 08:48 |  | 0d |  | 348h |
| 7 | 1.2.1 | **Build up work flow for module** | 2d | 2011-11-21 08:00 | 2011-11-22 17:00 |  | 0d |  | 64h |
| 8 | 1.2.1.1 | Build up work flow for module: 6.1,6.6, 6.7, 6.8 | 1.5d | 2011-11-21 08:00 | 2011-11-22 12:00 | 5 | 0d | nhanld | 12h |
| 9 | 1.2.1.2 | Build up work flow for module: 6.2 | 2d | 2011-11-21 08:00 | 2011-11-22 17:00 | 8SS | 29.1d | dungnm | 16h |
| 10 | 1.2.1.3 | Build up work flow for module: 6.3 | 1.5d | 2011-11-21 08:00 | 2011-11-22 12:00 | 8SS | 29.6d | hungnm | 12h |
| 11 | 1.2.1.4 | Build up work flow for module: 6.4 | 1.5d | 2011-11-21 08:00 | 2011-11-22 12:00 | 8SS | 29.6d | hant21 | 12h |
| 12 | 1.2.1.5 | Build up work flow for module: 6.5 | 1.5d | 2011-11-21 08:00 | 2011-11-22 12:00 | 8SS | 29.6d | phongtv | 12h |
| 13 | 1.2.2 | Template for prototype | 1.5d | 2011-11-22 13:00 | 2011-11-23 17:00 | 8 | 0d | nhanld | 12h |
| 14 | 1.2.3 | Create Q&A document, Rick and issues document | 0.5d | 2011-11-22 13:00 | 2011-11-22 17:00 | 13SS | 29.1d | dungnm | 4h |
| 15 | 1.2.4 | Create project plan, integrate work flow | 0.5d | 2011-11-22 13:00 | 2011-11-22 17:00 | 13SS | 29.1d | hant21 | 4h |
| 16 | 1.2.5 | Learning Spring dependency | 0.5d | 2011-11-22 13:00 | 2011-11-22 17:00 | 13SS | 29.1d | hungnm | 4h |
| 17 | 1.2.6 | Leaning Hibernate | 0.5d | 2011-11-22 13:00 | 2011-11-22 17:00 | 13SS | 29.1d | phongtv | 4h |
| 18 | 1.2.7 | **Build up prototype** | 1.5d | 2011-11-24 08:00 | 2011-11-25 12:00 |  | 0d |  | 60h |
| 19 | 1.2.7.1 | Build up prototype for module: 6.1,6.6, 6.7, 6.8 | 1.5d | 2011-11-24 08:00 | 2011-11-25 12:00 | 13 | 0d | nhanld | 12h |
| 20 | 1.2.7.2 | Build up prototype for module: 6.2 | 1.5d | 2011-11-24 08:00 | 2011-11-25 12:00 | 19SS | 26.6d | dungnm | 12h |
| 21 | 1.2.7.3 | Build up prototype for module: 6.3 | 1.5d | 2011-11-24 08:00 | 2011-11-25 12:00 | 19SS | 26.6d | dungnm | 12h |
| 22 | 1.2.7.4 | Build up prototype for module: 6.4 | 1.5d | 2011-11-24 08:00 | 2011-11-25 12:00 | 19SS | 26.6d | hant21 | 12h |
| 23 | 1.2.7.5 | Build up prototype for module: 6.5 | 1.5d | 2011-11-24 08:00 | 2011-11-25 12:00 | 19SS | 26.6d | phongtv | 12h |
| 24 | 1.2.8 | Learning Spring dependency | 2d | 2011-11-25 13:00 | 2011-11-29 12:00 | 19 | 0d | dungnm; hungnm | 32h |
| 25 | 1.2.9 | Learning Hibernate | 2d | 2011-11-25 13:00 | 2011-11-29 12:00 | 24SS | 24.6d | hant21; phongtv | 32h |
| 26 | 1.2.10 | Demo hibernate | 0.25d | 2011-11-29 13:00 | 2011-11-29 15:00 | 24 | 0d | hant21; phong | 4h |
| 27 | 1.2.11 | Demo spring | 0.25d | 2011-11-29 15:00 | 2011-11-29 17:00 | 26 | 0d | dungnm; hungnm | 4h |
| 28 | 1.2.12 | Design database | 0.1d | 2011-11-30 08:00 | 2011-11-30 08:48 | 27 | 0d | dungnm; hungnm; nhanld; phongtv; hant21 | 4h |
| 29 | 1.2.13 | High level design | 1d | 2011-11-30 08:48 | 2011-12-01 08:48 | 28 | 0d | dungnm; hungnm; nhanld; phongtv; hant21 | 40h |
| 30 | 1.2.14 | Learning control layout | 2d | 2011-12-01 08:48 | 2011-12-05 08:48 | 29 | 0d | dungnm; nhanld | 32h |
| 31 | 1.2.15 | Learning struts2, spring, hibernate integration | 2d | 2011-12-01 08:48 | 2011-12-05 08:48 | 30SS | 0d | hant21; phongtv; hungnm | 48h |

| ID | WBS | Task | Duration | Start | Finish | Predecessors | Total slack | Free slack | Resources | Work |
| --- | --- | --- | --- | --- | --- | --- | --- | --- | --- | --- |
| 32 | 1.3 | **Construction** | 9d | 2011-12-05 08:48 | 2011-12-16 08:48 |  | 0d |  |  | 720h |
| 33 | 1.3.1 | **Iteration 1 - Georaphy, contact** | 5d | 2011-12-05 08:48 | 2011-12-12 08:48 |  | 0d |  |  | 400h |
| 34 | 1.3.1.1 | **Contact** | 5d | 2011-12-05 08:48 | 2011-12-12 08:48 |  | 0d |  | nhanld; dungnm | 160h |
| 35 | 1.3.1.1.1 | Class, Sequence digaram | 0.5d | 2011-12-05 08:48 | 2011-12-05 13:48 | 31 | 0d |  | nhanld; dungnm | 8h |
| 36 | 1.3.1.1.2 | Prepare for Unit testing | 0.5d | 2011-12-05 13:48 | 2011-12-06 08:48 | 35 | 0d |  | nhanld; dungnm | 8h |
| 37 | 1.3.1.1.3 | Code | 2d | 2011-12-06 08:48 | 2011-12-08 08:48 | 36 | 0d |  | nhanld; dungnm | 32h |
| 38 | 1.3.1.1.4 | Peer code review | 0.5d | 2011-12-08 08:48 | 2011-12-08 13:48 | 37 | 0d |  | nhanld; dungnm | 8h |
| 39 | 1.3.1.1.5 | Prepare UT script | 0.5d | 2011-12-08 13:48 | 2011-12-09 08:48 | 38 | 0d |  | nhanld; dungnm | 8h |
| 40 | 1.3.1.1.6 | Perform UT and fix bug | 1d | 2011-12-09 08:48 | 2011-12-12 08:48 | 39 | 0d |  | nhanld; dungnm | 16h |
| 41 | 1.3.1.2 | **Trust Region** | 5d | 2011-12-05 08:48 | 2011-12-12 08:48 |  | 16d |  | hant21 | 80h |
| 42 | 1.3.1.2.1 | Class, Sequence digaram | 0.5d | 2011-12-05 08:48 | 2011-12-05 13:48 | 35SS | 16d | 0d | hant21 | 4h |
| 43 | 1.3.1.2.2 | Prepare for Unit testing | 0.5d | 2011-12-05 13:48 | 2011-12-06 08:48 | 42 | 16d | 0d | hant21 | 4h |
| 44 | 1.3.1.2.3 | Code | 2d | 2011-12-06 08:48 | 2011-12-08 08:48 | 43 | 16d | 0d | hant21 | 16h |
| 45 | 1.3.1.2.4 | Peer code review | 0.5d | 2011-12-08 08:48 | 2011-12-08 13:48 | 44 | 16d | 0d | hant21 | 4h |
| 46 | 1.3.1.2.5 | Prepare UT script | 0.5d | 2011-12-08 13:48 | 2011-12-09 08:48 | 45 | 16d | 0d | hant21 | 4h |
| 47 | 1.3.1.2.6 | Perform UT and fix bug | 1d | 2011-12-09 08:48 | 2011-12-12 08:48 | 46 | 16d |  | hant21 | 8h |
| 48 | 1.3.1.3 | **Trust District** | 5d | 2011-12-05 08:48 | 2011-12-12 08:48 |  | 16d |  | phongtv | 80h |
| 49 | 1.3.1.3.1 | Class, Sequence digaram | 0.5d | 2011-12-05 08:48 | 2011-12-05 13:48 | 35SS | 16d | 0d | phongtv | 4h |
| 50 | 1.3.1.3.2 | Prepare for Unit testing | 0.5d | 2011-12-05 13:48 | 2011-12-06 08:48 | 49 | 16d | 0d | phongtv | 4h |
| 51 | 1.3.1.3.3 | Code | 2d | 2011-12-06 08:48 | 2011-12-08 08:48 | 50 | 16d | 0d | phongtv | 16h |
| 52 | 1.3.1.3.4 | Peer code review | 0.5d | 2011-12-08 08:48 | 2011-12-08 13:48 | 51 | 16d | 0d | phongtv | 4h |
| 53 | 1.3.1.3.5 | Prepare UT script | 0.5d | 2011-12-08 13:48 | 2011-12-09 08:48 | 52 | 16d | 0d | phongtv | 4h |
| 54 | 1.3.1.3.6 | Perform UT and fix bug | 1d | 2011-12-09 08:48 | 2011-12-12 08:48 | 53 | 16d |  | phongtv | 8h |
| 55 | 1.3.1.4 | **Gov Office** | 5d | 2011-12-05 08:48 | 2011-12-12 08:48 |  | 16d |  | hungnm | 80h |
| 56 | 1.3.1.4.1 | Class, Sequence digaram | 0.5d | 2011-12-05 08:48 | 2011-12-05 13:48 | 35SS | 16d | 0d | phongtv | 4h |
| 57 | 1.3.1.4.2 | Prepare for Unit testing | 0.5d | 2011-12-05 13:48 | 2011-12-06 08:48 | 56 | 16d | 0d | phongtv | 4h |
| 58 | 1.3.1.4.3 | Code | 2d | 2011-12-06 08:48 | 2011-12-08 08:48 | 57 | 16d | 0d | phongtv | 16h |
| 59 | 1.3.1.4.4 | Peer code review | 0.5d | 2011-12-08 08:48 | 2011-12-08 13:48 | 58 | 16d | 0d | phongtv | 4h |
| 60 | 1.3.1.4.5 | Prepare UT script | 0.5d | 2011-12-08 13:48 | 2011-12-09 08:48 | 59 | 16d | 0d | phongtv | 4h |
| 61 | 1.3.1.4.6 | Perform UT and fix bug | 1d | 2011-12-09 08:48 | 2011-12-12 08:48 | 60 | 16d |  | phongtv | 8h |

Notes:
- 34: (List, Add, Amend)
- 41: (List, Add, Amend, Mark)
- 48: (List, Add, Amend, Mark)
- 55: (List, Detail)

| ID | WBS | Task | Duration | Start | Finish | Predecessors | Total slack | Free slack | Resources | Work |
| --- | --- | --- | --- | --- | --- | --- | --- | --- | --- | --- |
| 62 | 1.3.2 | **Iteration 2 - Organization Maintenance** | 4d | 2011-12-12 08:48 | 2011-12-16 08:48 |  | 0d |  |  | 320h |
| 63 | 1.3.2.1 | **Organization** | 4d | 2011-12-12 08:48 | 2011-12-16 08:48 |  | 0d |  | dungnm | 64h |
| 64 | 1.3.2.1.1 | Class, Sequence digaram | 0.5d | 2011-12-12 08:48 | 2011-12-12 13:48 | 40 | 0d |  | dungnm | 4h |
| 65 | 1.3.2.1.2 | Prepare for Unit testing | 0.5d | 2011-12-12 13:48 | 2011-12-13 08:48 | 64 | 0d |  | dungnm | 4h |
| 66 | 1.3.2.1.3 | Code | 1.5d | 2011-12-13 08:48 | 2011-12-14 13:48 | 65 | 0d |  | dungnm | 12h |
| 67 | 1.3.2.1.4 | Peer code review | 0.5d | 2011-12-14 13:48 | 2011-12-15 08:48 | 66 | 0d |  | dungnm | 4h |
| 68 | 1.3.2.1.5 | Prepare UT script | 0.5d | 2011-12-15 08:48 | 2011-12-15 13:48 | 67 | 0d |  | dungnm | 4h |
| 69 | 1.3.2.1.6 | Perform UT and fix bug | 0.5d | 2011-12-15 13:48 | 2011-12-16 08:48 | 68 | 0d |  | dungnm | 4h |
| 70 | 1.3.2.2 | **Supporting Materials** | 4d | 2011-12-12 08:48 | 2011-12-16 08:48 |  | 12d |  | nhanld | 64h |
| 71 | 1.3.2.2.1 | Class, Sequence digaram | 0.5d | 2011-12-12 08:48 | 2011-12-12 13:48 | 64SS | 12d | 0d | nhanld | 4h |
| 72 | 1.3.2.2.2 | Prepare for Unit testing | 0.5d | 2011-12-12 13:48 | 2011-12-13 08:48 | 71 | 12d | 0d | nhanld | 4h |
| 73 | 1.3.2.2.3 | Code | 1.5d | 2011-12-13 08:48 | 2011-12-14 13:48 | 72 | 12d | 0d | nhanld | 12h |
| 74 | 1.3.2.2.4 | Peer code review | 0.5d | 2011-12-14 13:48 | 2011-12-15 08:48 | 73 | 12d | 0d | nhanld | 4h |
| 75 | 1.3.2.2.5 | Prepare UT script | 0.5d | 2011-12-15 08:48 | 2011-12-15 13:48 | 74 | 12d | 0d | nhanld | 4h |
| 76 | 1.3.2.2.6 | Perform UT and fix bug | 0.5d | 2011-12-15 13:48 | 2011-12-16 08:48 | 75 | 12d |  | nhanld | 4h |
| 77 | 1.3.2.3 | **Directorates** | 4d | 2011-12-12 08:48 | 2011-12-16 08:48 |  | 12d |  | hungnm | 64h |
| 78 | 1.3.2.3.1 | Class, Sequence digaram | 0.5d | 2011-12-12 08:48 | 2011-12-12 13:48 | 64SS | 12d | 0d | hungnm | 4h |
| 79 | 1.3.2.3.2 | Prepare for Unit testing | 0.5d | 2011-12-12 13:48 | 2011-12-13 08:48 | 78 | 12d | 0d | hungnm | 4h |
| 80 | 1.3.2.3.3 | Code | 1.5d | 2011-12-13 08:48 | 2011-12-14 13:48 | 79 | 12d | 0d | hungnm | 12h |
| 81 | 1.3.2.3.4 | Peer code review | 0.5d | 2011-12-14 13:48 | 2011-12-15 08:48 | 80 | 12d | 0d | hungnm | 4h |
| 82 | 1.3.2.3.5 | Prepare UT script | 0.5d | 2011-12-15 08:48 | 2011-12-15 13:48 | 81 | 12d | 0d | hungnm | 4h |
| 83 | 1.3.2.3.6 | Perform UT and fix bug | 0.5d | 2011-12-15 13:48 | 2011-12-16 08:48 | 82 | 12d |  | hungnm | 4h |
| 84 | 1.3.2.4 | **Department** | 4d | 2011-12-12 08:48 | 2011-12-16 08:48 |  | 12d |  | phongtv | 64h |
| 85 | 1.3.2.4.1 | Class, Sequence digaram | 0.5d | 2011-12-12 08:48 | 2011-12-12 13:48 | 64SS | 12d | 0d | phongtv | 4h |
| 86 | 1.3.2.4.2 | Prepare for Unit testing | 0.5d | 2011-12-12 13:48 | 2011-12-13 08:48 | 85 | 12d | 0d | phongtv | 4h |
| 87 | 1.3.2.4.3 | Code | 1.5d | 2011-12-13 08:48 | 2011-12-14 13:48 | 86 | 12d | 0d | phongtv | 12h |
| 88 | 1.3.2.4.4 | Peer code review | 0.5d | 2011-12-14 13:48 | 2011-12-15 08:48 | 87 | 12d | 0d | phongtv | 4h |
| 89 | 1.3.2.4.5 | Prepare UT script | 0.5d | 2011-12-15 08:48 | 2011-12-15 13:48 | 88 | 12d | 0d | phongtv | 4h |
| 90 | 1.3.2.4.6 | Perform UT and fix bug | 0.5d | 2011-12-15 13:48 | 2011-12-16 08:48 | 89 | 12d |  | phongtv | 4h |

Notes:
- 63: (List, Add, Amend)
- 70: (List, Add, Amend, Mark)
- 77: (List, Add, Amend, Mark)
- 84: (List, Add, Amend, Mark)

| ID | WBS | Task | Duration | Start | Finish | Predecessors | Total slack | Free slack | Resources | Work |
| --- | --- | --- | --- | --- | --- | --- | --- | --- | --- | --- |
| 91 | 1.3.2.5 | **Team** | 4d | 2011-12-12 08:48 | 2011-12-16 08:48 |  | 12d |  | hant21 | 64h |
| 92 | 1.3.2.5.1 | Class, Sequence digaram | 0.5d | 2011-12-12 08:48 | 2011-12-12 13:48 | 64SS | 12d | 0d | hant21 | 4h |
| 93 | 1.3.2.5.2 | Prepare for Unit testing | 0.5d | 2011-12-12 13:48 | 2011-12-13 08:48 | 92 | 12d | 0d | hant21 | 4h |
| 94 | 1.3.2.5.3 | Code | 1.5d | 2011-12-13 08:48 | 2011-12-14 13:48 | 93 | 12d | 0d | hant21 | 12h |
| 95 | 1.3.2.5.4 | Peer code review | 0.5d | 2011-12-14 13:48 | 2011-12-15 08:48 | 94 | 12d | 0d | hant21 | 4h |
| 96 | 1.3.2.5.5 | Prepare UT script | 0.5d | 2011-12-15 08:48 | 2011-12-15 13:48 | 95 | 12d | 0d | hant21 | 4h |
| 97 | 1.3.2.5.6 | Perform UT and fix bug | 0.5d | 2011-12-15 13:48 | 2011-12-16 08:48 | 96 | 12d |  | hant21 | 4h |
| 98 | 1.4 | **Iteration 3 - Login, menu, address lookup, addresslookup,Services, Programme** | 12.5d | 2011-12-15 13:48 | 2012-01-03 08:48 |  | 0d |  |  | 752h |
| 99 | 1.4.1 | **Logon-Logout, menu** | 4d | 2011-12-16 08:48 | 2011-12-22 08:48 |  | 0d |  | nhanld | 64h |
| 100 | 1.4.1.1 | Class, Sequence digaram | 0.5d | 2011-12-16 08:48 | 2011-12-16 13:48 | 69 | 0d |  | nhanld | 4h |
| 101 | 1.4.1.2 | Prepare for Unit testing | 0.5d | 2011-12-16 13:48 | 2011-12-19 08:48 | 100 | 0d |  | nhanld | 4h |
| 102 | 1.4.1.3 | Code | 1.5d | 2011-12-19 08:48 | 2011-12-20 13:48 | 101 | 0d |  | nhanld | 12h |
| 103 | 1.4.1.4 | Peer code review | 0.5d | 2011-12-20 13:48 | 2011-12-21 08:48 | 102 | 0d |  | nhanld | 4h |
| 104 | 1.4.1.5 | Prepare UT script | 0.5d | 2011-12-21 08:48 | 2011-12-21 13:48 | 103 | 0d |  | nhanld | 4h |
| 105 | 1.4.1.6 | Perform UT and fix bug | 0.5d | 2011-12-21 13:48 | 2011-12-22 08:48 | 104 | 0d |  | nhanld | 4h |
| 106 | 1.4.2 | **Type of Business lookup** | 4d | 2011-12-15 13:48 | 2011-12-21 13:48 |  | 8.5d |  | hant21 | 64h |
| 107 | 1.4.2.1 | Class, Sequence digaram | 0.5d | 2011-12-15 13:48 | 2011-12-16 08:48 | 69SS | 8.5d | 0d | hant21 | 4h |
| 108 | 1.4.2.2 | Prepare for Unit testing | 0.5d | 2011-12-16 08:48 | 2011-12-16 13:48 | 107 | 8.5d | 0d | hant21 | 4h |
| 109 | 1.4.2.3 | Code | 1.5d | 2011-12-16 13:48 | 2011-12-20 08:48 | 108 | 8.5d | 0d | hant21 | 12h |
| 110 | 1.4.2.4 | Peer code review | 0.5d | 2011-12-20 08:48 | 2011-12-20 13:48 | 109 | 8.5d | 0d | hant21 | 4h |
| 111 | 1.4.2.5 | Prepare UT script | 0.5d | 2011-12-20 13:48 | 2011-12-21 08:48 | 110 | 8.5d | 0d | hant21 | 4h |
| 112 | 1.4.2.6 | Perform UT and fix bug | 0.5d | 2011-12-21 08:48 | 2011-12-21 13:48 | 111 | 8.5d |  | hant21 | 4h |
| 113 | 1.4.3 | **Address lookup** | 4d | 2011-12-15 13:48 | 2011-12-21 13:48 |  | 8.5d |  | nhanld | 64h |
| 114 | 1.4.3.1 | Class, Sequence digaram | 0.5d | 2011-12-15 13:48 | 2011-12-16 08:48 | 69SS | 8.5d | 0d | nhanld | 4h |
| 115 | 1.4.3.2 | Prepare for Unit testing | 0.5d | 2011-12-16 08:48 | 2011-12-16 13:48 | 114 | 8.5d | 0d | nhanld | 4h |
| 116 | 1.4.3.3 | Code | 1.5d | 2011-12-16 13:48 | 2011-12-20 08:48 | 115 | 8.5d | 0d | nhanld | 12h |
| 117 | 1.4.3.4 | Peer code review | 0.5d | 2011-12-20 08:48 | 2011-12-20 13:48 | 116 | 8.5d | 0d | nhanld | 4h |
| 118 | 1.4.3.5 | Prepare UT script | 0.5d | 2011-12-20 13:48 | 2011-12-21 08:48 | 117 | 8.5d | 0d | nhanld | 4h |
| 119 | 1.4.3.6 | Perform UT and fix bug | 0.5d | 2011-12-21 08:48 | 2011-12-21 13:48 | 118 | 8.5d |  | nhanld | 4h |

Notes:
- 91: (List, Add, Amend, Mark)
- 99: Logon logout, menu
- 106: (List, Search)
- 113: (List, Add, Amend)

| ID | WBS | Task | Duration | Start | Finish | Predecessors | Total slack | Free slack | Resources | Work |
| --- | --- | --- | --- | --- | --- | --- | --- | --- | --- | --- |
| 120 | 1.4.4 | **Service** | 4d | 2011-12-15 13:48 | 2011-12-21 13:48 |  | 8.5d |  | hungnm | 64h |
| 121 | 1.4.4.1 | Class, Sequence digaram | 0.5d | 2011-12-15 13:48 | 2011-12-16 08:48 | 69SS | 8.5d | 0d | hungnm | 4h |
| 122 | 1.4.4.2 | Prepare for Unit testing | 0.5d | 2011-12-16 08:48 | 2011-12-16 13:48 | 121 | 8.5d | 0d | hungnm | 4h |
| 123 | 1.4.4.3 | Code | 1.5d | 2011-12-16 13:48 | 2011-12-20 08:48 | 122 | 8.5d | 0d | hungnm | 12h |
| 124 | 1.4.4.4 | Peer code review | 0.5d | 2011-12-20 08:48 | 2011-12-20 13:48 | 123 | 8.5d | 0d | hungnm | 4h |
| 125 | 1.4.4.5 | Prepare UT script | 0.5d | 2011-12-20 13:48 | 2011-12-21 08:48 | 124 | 8.5d | 0d | hungnm | 4h |
| 126 | 1.4.4.6 | Perform UT and fix bug | 0.5d | 2011-12-21 08:48 | 2011-12-21 13:48 | 125 | 8.5d |  | hungnm | 4h |
| 127 | 1.4.5 | **Programme** | 4d | 2011-12-15 13:48 | 2011-12-21 13:48 |  | 8.5d |  | hungnm | 64h |
| 128 | 1.4.5.1 | Class, Sequence digaram | 0.5d | 2011-12-15 13:48 | 2011-12-16 08:48 | 69SS | 8.5d | 0d | hungnm | 4h |
| 129 | 1.4.5.2 | Prepare for Unit testing | 0.5d | 2011-12-16 08:48 | 2011-12-16 13:48 | 128 | 8.5d | 0d | hungnm | 4h |
| 130 | 1.4.5.3 | Code | 1.5d | 2011-12-16 13:48 | 2011-12-20 08:48 | 129 | 8.5d | 0d | hungnm | 12h |
| 131 | 1.4.5.4 | Peer code review | 0.5d | 2011-12-20 08:48 | 2011-12-20 13:48 | 130 | 8.5d | 0d | hungnm | 4h |
| 132 | 1.4.5.5 | Prepare UT script | 0.5d | 2011-12-20 13:48 | 2011-12-21 08:48 | 131 | 8.5d | 0d | hungnm | 4h |
| 133 | 1.4.5.6 | Perform UT and fix bug | 0.5d | 2011-12-21 08:48 | 2011-12-21 13:48 | 132 | 8.5d |  | hungnm | 4h |
| 134 | 1.4.6 | **Iteration 4 -Premise, Facility, Volunteering, Minor Work Projects** | 4d | 2011-12-22 08:48 | 2011-12-28 08:48 |  | 0d |  |  | 320h |
| 135 | 1.4.6.1 | **Premise** | 4d | 2011-12-22 08:48 | 2011-12-28 08:48 |  | 0d |  | nhanld; dungnm | 128h |
| 136 | 1.4.6.1.1 | Class, Sequence digaram | 0.5d | 2011-12-22 08:48 | 2011-12-22 13:48 | 105 | 0d |  | nhanld; dungnm | 8h |
| 137 | 1.4.6.1.2 | Prepare for Unit testing | 0.5d | 2011-12-22 13:48 | 2011-12-23 08:48 | 136 | 4d | 0d | nhanld; dungnm | 8h |
| 138 | 1.4.6.1.3 | Code | 1.5d | 2011-12-23 08:48 | 2011-12-26 13:48 | 137 | 4d | 0d | nhanld; dungnm | 24h |
| 139 | 1.4.6.1.4 | Peer code review | 0.5d | 2011-12-26 13:48 | 2011-12-27 08:48 | 138 | 4d | 0d | nhanld; dungnm | 8h |
| 140 | 1.4.6.1.5 | Prepare UT script | 0.5d | 2011-12-27 08:48 | 2011-12-27 13:48 | 139 | 4d | 0d | nhanld; dungnm | 8h |
| 141 | 1.4.6.1.6 | Perform UT and fix bug | 0.5d | 2011-12-27 13:48 | 2011-12-28 08:48 | 140 | 4d |  | nhanld; dungnm | 8h |
| 142 | 1.4.6.2 | **Facility** | 4d | 2011-12-22 08:48 | 2011-12-28 08:48 |  | 4d |  | hungnm | 64h |
| 143 | 1.4.6.2.1 | Class, Sequence digaram | 0.5d | 2011-12-22 08:48 | 2011-12-22 13:48 | 136SS | 4d | 0d | hungnm | 4h |
| 144 | 1.4.6.2.2 | Prepare for Unit testing | 0.5d | 2011-12-22 13:48 | 2011-12-23 08:48 | 143 | 4d | 0d | hungnm | 4h |
| 145 | 1.4.6.2.3 | Code | 1.5d | 2011-12-23 08:48 | 2011-12-26 13:48 | 144 | 4d | 0d | hungnm | 12h |
| 146 | 1.4.6.2.4 | Peer code review | 0.5d | 2011-12-26 13:48 | 2011-12-27 08:48 | 145 | 4d | 0d | hungnm | 4h |
| 147 | 1.4.6.2.5 | Prepare UT script | 0.5d | 2011-12-27 08:48 | 2011-12-27 13:48 | 146 | 4d | 0d | hungnm | 4h |
| 148 | 1.4.6.2.6 | Perform UT and fix bug | 0.5d | 2011-12-27 13:48 | 2011-12-28 08:48 | 147 | 4d |  | hungnm | 4h |

Notes:
- 120: (List, Add, Amend, Mark)
- 127: (List, Add, Amend, Mark)
- 135: (List, Add, Amend)
- 142: (List, Add, Amend, Mark)

| ID | WBS | Task | Duration | Start | Finish | Predecessors | Total slack | Free slack | Resources | Work |
| --- | --- | --- | --- | --- | --- | --- | --- | --- | --- | --- |
| 149 | 1.4.6.3 | **Volunteering** | 4d | 2011-12-22 08:48 | 2011-12-28 08:48 |  | 4d |  | phongtv | 64h |
| 150 | 1.4.6.3.1 | Class, Sequence digaram | 0.5d | 2011-12-22 08:48 | 2011-12-22 13:48 | 136SS | 4d | 0d | phongtv | 4h |
| 151 | 1.4.6.3.2 | Prepare for Unit testing | 0.5d | 2011-12-22 13:48 | 2011-12-23 08:48 | 150 | 4d | 0d | phongtv | 4h |
| 152 | 1.4.6.3.3 | Code | 1.5d | 2011-12-23 08:48 | 2011-12-26 13:48 | 151 | 4d | 0d | phongtv | 12h |
| 153 | 1.4.6.3.4 | Peer code review | 0.5d | 2011-12-26 13:48 | 2011-12-27 08:48 | 152 | 4d | 0d | phongtv | 4h |
| 154 | 1.4.6.3.5 | Prepare UT script | 0.5d | 2011-12-27 08:48 | 2011-12-27 13:48 | 153 | 4d | 0d | phongtv | 4h |
| 155 | 1.4.6.3.6 | Perform UT and fix bug | 0.5d | 2011-12-27 13:48 | 2011-12-28 08:48 | 154 | 4d |  | phongtv | 4h |
| 156 | 1.4.6.4 | **Minor Work Projects** | 4d | 2011-12-22 08:48 | 2011-12-28 08:48 |  | 0d |  | hant21 | 64h |
| 157 | 1.4.6.4.1 | Class, Sequence digaram | 0.5d | 2011-12-22 08:48 | 2011-12-22 13:48 | 136SS | 0d |  | hant21 | 4h |
| 158 | 1.4.6.4.2 | Prepare for Unit testing | 0.5d | 2011-12-22 13:48 | 2011-12-23 08:48 | 157 | 0d |  | hant21 | 4h |
| 159 | 1.4.6.4.3 | Code | 1.5d | 2011-12-23 08:48 | 2011-12-26 13:48 | 158 | 0d |  | hant21 | 12h |
| 160 | 1.4.6.4.4 | Peer code review | 0.5d | 2011-12-26 13:48 | 2011-12-27 08:48 | 159 | 0d |  | hant21 | 4h |
| 161 | 1.4.6.4.5 | Prepare UT script | 0.5d | 2011-12-27 08:48 | 2011-12-27 13:48 | 160 | 0d |  | hant21 | 4h |
| 162 | 1.4.6.4.6 | Perform UT and fix bug | 0.5d | 2011-12-27 13:48 | 2011-12-28 08:48 | 161 | 0d |  | hant21 | 4h |
| 164 | 1.4.7 | **Integrate modules** | 4d | 2011-12-28 08:48 | 2012-01-03 08:48 |  | 0d |  |  | 112h |
| 165 | 1.4.7.1 | Merge modules | 1d | 2011-12-28 08:48 | 2011-12-29 08:48 | 162 | 0d |  | nhanld | 8h |
| 166 | 1.4.7.2 | System test | 2d | 2011-12-29 08:48 | 2012-01-02 08:48 | 165 | 0d |  | phongtv; hant21; hungnm; dungnm | 64h |
| 167 | 1.4.7.3 | **Help document** | 1d | 2012-01-02 08:48 | 2012-01-03 08:48 |  | 0d |  |  | 40h |
| 168 | 1.4.7.3.1 | Write help documents | 1d | 2012-01-02 08:48 | 2012-01-03 08:48 | 166 | 0d |  | phongtv; hant21; hungnm; dungnm; nhanld | 40h |

Notes:
- 149: (List, Add, Amend, Mark)
- 156: (List, Add, Amend, Mark)
