# CPF_Webservice2012_MasterPlan-v1.0

Schedule from MS Project, 2012-06-01 to 2012-10-17.

## Calendars

- Standard: Mon-Fri 08:00-12:00, 13:00-17:00; Sat-Sun off.

## Resources

| Resource |
| --- |
| HvN |
| CPF |

## Schedule

| ID | WBS | Task | Type | Duration | Start | Finish | Predecessors | Total slack | Free slack | Constraint | Resources | Work |
| --- | --- | --- | --- | --- | --- | --- | --- | --- | --- | --- | --- | --- |
| 1 | 1 | **CPF WEB SERVICE 2012** |  | 99d | 2012-06-01 | 2012-10-17 |  | 0d |  |  |  | 2088h |
| 2 | 1.1 | **Initiation** |  | 10d | 2012-06-01 | 2012-06-14 |  | 0d |  |  |  | 160h |
| 3 | 1.1.1 | Project kick-start | milestone | 0d | 2012-06-01 | 2012-06-01 |  | 0d |  | start no earlier than 2012-06-01 | HvN |  |
| 4 | 1.1.2 | CPF provides databases schema | milestone | 0d | 2012-06-01 | 2012-06-01 | 3 | 74d | 0d |  | CPF |  |
| 5 | 1.1.3 | Agreed PID, full requirements |  | 10d | 2012-06-01 | 2012-06-14 | 3 | 89d |  |  | CPF; HvN | 160h |
| 6 | 1.2 | **Definition & Solution Stage** |  | 32d | 2012-06-01 | 2012-07-16 |  | 1d |  |  |  | 608h |
| 7 | 1.2.1 | **Requirement** |  | 11d | 2012-06-01 | 2012-06-15 |  | 74d |  |  |  | 160h |
| 8 | 1.2.1.1 | Clarify requirement |  | 10d | 2012-06-01 | 2012-06-14 | 4 | 74d | 0d |  | CPF; HvN | 160h |
| 9 | 1.2.1.2 | Baseline requirement | milestone | 0d | 2012-06-15 | 2012-06-15 | 8FS+1d | 88d |  |  | CPF |  |
| 10 | 1.2.2 | **Design** |  | 31d | 2012-06-04 | 2012-07-16 |  | 0d |  |  |  | 264h |
| 11 | 1.2.2.1 | Develop Architecture design |  | 8d | 2012-06-04 | 2012-06-13 | 3FS+1d | 0d |  |  | HvN | 64h |
| 12 | 1.2.2.2 | Review Architecture design |  | 2d | 2012-06-14 | 2012-06-15 | 11 | 18d | 0d |  | CPF | 16h |
| 13 | 1.2.2.3 | Approve Architecture design | milestone | 0d | 2012-06-20 | 2012-06-20 | 12FS+3d | 18d |  |  | CPF |  |
| 14 | 1.2.2.4 | Create Detail design |  | 20d | 2012-06-11 | 2012-07-06 | 11SS+5d | 0d |  |  | HvN | 160h |
| 15 | 1.2.2.5 | Review Detail design |  | 3d | 2012-07-09 | 2012-07-11 | 14 | 0d |  |  | CPF | 24h |
| 16 | 1.2.2.6 | Approve Detail Design | milestone | 0d | 2012-07-16 | 2012-07-16 | 15FS+3d | 0d |  |  | CPF |  |
| 17 | 1.2.3 | **System Test** |  | 24d | 2012-06-04 | 2012-07-05 |  | 74d |  |  |  | 184h |
| 18 | 1.2.3.1 | Compose system test plan |  | 5d | 2012-06-04 | 2012-06-08 | 3FS+1d | 75d | 0d |  | HvN | 40h |
| 19 | 1.2.3.2 | Review&Approve system test plan |  | 3d | 2012-06-11 | 2012-06-13 | 18 | 75d | 1d |  | CPF | 24h |
| 20 | 1.2.3.3 | Develop major system test cases |  | 10d | 2012-06-15 | 2012-06-28 | 19, 8 | 74d | 0d |  | HvN | 80h |
| 21 | 1.2.3.4 | Review&Approve test cases |  | 5d | 2012-06-29 | 2012-07-05 | 20 | 74d |  |  | CPF | 40h |
| 22 | 1.3 | **Construction & Transition Stage** |  | 43d | 2012-07-09 | 2012-09-05 |  | 0d |  |  |  | 1080h |
| 23 | 1.3.1 | **Coding** |  | 36d | 2012-07-09 | 2012-08-27 |  | 0d |  |  |  | 768h |
| 24 | 1.3.1.1 | Rates Request |  | 8d | 2012-07-09 | 2012-07-18 | 10FS-6d | 0d |  |  | HvN | 64h |
| 25 | 1.3.1.2 | Loan Quote Request |  | 9d | 2012-07-19 | 2012-07-31 | 24 | 11d | 0d |  | HvN | 72h |
| 26 | 1.3.1.3 | Loan Creation Request |  | 15d | 2012-08-01 | 2012-08-21 | 25 | 11d |  |  | HvN | 120h |
| 27 | 1.3.1.4 | Redemption Quote Request |  | 9d | 2012-07-09 | 2012-07-19 | 10FS-6d | 7d | 0d |  | HvN | 72h |
| 28 | 1.3.1.5 | Amend Payment Schedule Request |  | 9d | 2012-07-20 | 2012-08-01 | 27 | 7d | 0d |  | HvN | 72h |
| 29 | 1.3.1.6 | Cancellation Request |  | 9d | 2012-08-02 | 2012-08-14 | 28 | 7d | 0d |  | HvN | 72h |
| 30 | 1.3.1.7 | Change of Address Request |  | 9d | 2012-08-15 | 2012-08-27 | 29 | 7d |  |  | HvN | 72h |
| 31 | 1.3.1.8 | Change of bank details request |  | 10d | 2012-07-09 | 2012-07-20 | 10FS-6d | 15d | 0d |  | HvN | 80h |
| 32 | 1.3.1.9 | Mid Term Adjustment Request |  | 10d | 2012-07-23 | 2012-08-03 | 31 | 15d | 0d |  | HvN | 80h |
| 33 | 1.3.1.10 | Report request |  | 8d | 2012-08-06 | 2012-08-15 | 32 | 15d |  |  | HvN | 64h |

| ID | WBS | Task | Type | Duration | Start | Finish | Predecessors | Total slack | Free slack | Resources | Work |
| --- | --- | --- | --- | --- | --- | --- | --- | --- | --- | --- | --- |
| 34 | 1.3.2 | **System Test** |  | 32d | 2012-07-19 | 2012-08-31 |  | 0d |  |  | 256h |
| 35 | 1.3.2.1 | Perform system test |  | 32d | 2012-07-19 | 2012-08-31 | 24 | 0d |  | HvN | 256h |
| 36 | 1.3.3 | **Deployment** |  | 7d | 2012-07-23 | 2012-07-31 |  | 26d |  |  | 56h |
| 37 | 1.3.3.1 | Compose deployment guideline |  | 5d | 2012-07-23 | 2012-07-27 | 24FS+2d | 26d | 0d | HvN | 40h |
| 38 | 1.3.3.2 | Review deployment guideline |  | 2d | 2012-07-30 | 2012-07-31 | 37 | 26d |  | CPF | 16h |
| 39 | 1.3.4 | UAT Release | milestone | 0d | 2012-09-05 | 2012-09-05 | 23, 36, 34FS+3d | 0d |  | HvN |  |
| 40 | 1.4 | **Termination** |  | 30d | 2012-09-06 | 2012-10-17 |  | 0d |  |  | 240h |
| 41 | 1.4.1 | UAT support |  | 10d | 2012-09-06 | 2012-09-19 | 39 | 0d |  | HvN | 80h |
| 42 | 1.4.2 | Sign-off UAT | milestone | 0d | 2012-09-19 | 2012-09-19 | 41 | 0d |  | CPF |  |
| 43 | 1.4.3 | Warranty support |  | 20d | 2012-09-20 | 2012-10-17 | 42 | 0d |  | HvN | 160h |
| 44 | 1.4.4 | Sign-off Warranty | milestone | 0d | 2012-10-17 | 2012-10-17 | 43 | 0d |  | CPF |  |
