# ShawTrust_SD_Master_Plan_v0.2

Schedule from MS Project, 2011-11-18 to 2011-12-30.
Sony Electronics, Inc.

## Calendars

- Standard: Mon-Fri 08:00-12:00, 13:00-17:00; Sat-Sun off.

## Resources

| Resource |
| --- |
| dungnm |
| hant21 |
| hungnm |
| nhanld |
| phongtv |

## Schedule

| ID | WBS | Task | Duration | Start | Finish | Predecessors | Total slack |
| --- | --- | --- | --- | --- | --- | --- | --- |
| 1 | 1 | **AB-SD** | 31d | 2011-11-18 08:00 | 2011-12-30 17:00 |  | 0d |
| 2 | 1.1 | **Construction** | 30d | 2011-11-18 08:00 | 2011-12-29 17:00 |  | 0d |
| 3 | 1.1.1 | **Iteration 1 - Common, Programme, Geography1** | 7d | 2011-11-18 08:00 | 2011-11-28 17:00 |  | 0d |
| 4 | 1.1.1.1 | **Logon-Logout** | 7d | 2011-11-18 08:00 | 2011-11-28 17:00 |  | 0d |
| 5 | 1.1.1.1.1 | Study requirement | 0.5d | 2011-11-18 08:00 | 2011-11-18 12:00 |  | 0d |
| 6 | 1.1.1.1.2 | Prepare GUI prototypes | 0.5d | 2011-11-18 13:00 | 2011-11-18 17:00 | 5 | 0d |
| 7 | 1.1.1.1.3 | Study design & prepare pseudo codes | 0.75d | 2011-11-21 08:00 | 2011-11-21 15:00 | 6 | 0d |
| 8 | 1.1.1.1.4 | Prepare UT case document | 0.25d | 2011-11-21 15:00 | 2011-11-21 17:00 | 7 | 0d |
| 9 | 1.1.1.1.5 | Code | 2d | 2011-11-22 08:00 | 2011-11-23 17:00 | 5, 8 | 0d |
| 10 | 1.1.1.1.6 | Self code review & Fix bugs | 0.5d | 2011-11-24 08:00 | 2011-11-24 12:00 | 9 | 0d |
| 11 | 1.1.1.1.7 | Peer code review & Fix bugs | 0.5d | 2011-11-24 13:00 | 2011-11-24 17:00 | 10 | 0d |
| 12 | 1.1.1.1.8 | Update UT case document | 0.5d | 2011-11-25 08:00 | 2011-11-25 12:00 | 11 | 0d |
| 13 | 1.1.1.1.9 | Prepare UT scripts | 0.5d | 2011-11-25 13:00 | 2011-11-25 17:00 | 12 | 0d |
| 14 | 1.1.1.1.10 | Perform UT & Fix bugs | 1d | 2011-11-28 08:00 | 2011-11-28 17:00 | 13 | 0d |
| 15 | 1.1.1.2 | **Lookups** | 7d | 2011-11-18 08:00 | 2011-11-28 17:00 |  | 0d |
| 16 | 1.1.1.2.1 | Study requirement | 0.5d | 2011-11-18 08:00 | 2011-11-18 12:00 | 5SS | 0d |
| 17 | 1.1.1.2.2 | Prepare GUI prototypes | 0.5d | 2011-11-18 13:00 | 2011-11-18 17:00 | 16 | 0d |
| 18 | 1.1.1.2.3 | Study design & prepare pseudo codes | 0.75d | 2011-11-21 08:00 | 2011-11-21 15:00 | 17 | 0d |
| 19 | 1.1.1.2.4 | Prepare UT case document | 0.25d | 2011-11-21 15:00 | 2011-11-21 17:00 | 18 | 0d |
| 20 | 1.1.1.2.5 | Code | 2d | 2011-11-22 08:00 | 2011-11-23 17:00 | 16, 19 | 0d |
| 21 | 1.1.1.2.6 | Self code review & Fix bugs | 0.5d | 2011-11-24 08:00 | 2011-11-24 12:00 | 20 | 0d |
| 22 | 1.1.1.2.7 | Peer code review & Fix bugs | 0.5d | 2011-11-24 13:00 | 2011-11-24 17:00 | 21 | 0d |
| 23 | 1.1.1.2.8 | Update UT case document | 0.5d | 2011-11-25 08:00 | 2011-11-25 12:00 | 22 | 0d |
| 24 | 1.1.1.2.9 | Prepare UT scripts | 0.5d | 2011-11-25 13:00 | 2011-11-25 17:00 | 23 | 0d |
| 25 | 1.1.1.2.10 | Perform UT & Fix bugs | 1d | 2011-11-28 08:00 | 2011-11-28 17:00 | 24 | 0d |

Notes:
- 15: Address, TypeOfBusiness

| ID | WBS | Task | Duration | Start | Finish | Predecessors | Total slack |
| --- | --- | --- | --- | --- | --- | --- | --- |
| 26 | 1.1.1.3 | **Contacts Maintenance** | 7d | 2011-11-18 08:00 | 2011-11-28 17:00 |  | 0d |
| 27 | 1.1.1.3.1 | Study requirement | 0.5d | 2011-11-18 08:00 | 2011-11-18 12:00 | 5SS | 0d |
| 28 | 1.1.1.3.2 | Prepare GUI prototypes | 0.5d | 2011-11-18 13:00 | 2011-11-18 17:00 | 27 | 0d |
| 29 | 1.1.1.3.3 | Study design & prepare pseudo codes | 0.75d | 2011-11-21 08:00 | 2011-11-21 15:00 | 28 | 0d |
| 30 | 1.1.1.3.4 | Prepare UT case document | 0.25d | 2011-11-21 15:00 | 2011-11-21 17:00 | 29 | 0d |
| 31 | 1.1.1.3.5 | Code | 2d | 2011-11-22 08:00 | 2011-11-23 17:00 | 27, 30 | 0d |
| 32 | 1.1.1.3.6 | Self code review & Fix bugs | 0.5d | 2011-11-24 08:00 | 2011-11-24 12:00 | 31 | 0d |
| 33 | 1.1.1.3.7 | Peer code review & Fix bugs | 0.5d | 2011-11-24 13:00 | 2011-11-24 17:00 | 32 | 0d |
| 34 | 1.1.1.3.8 | Update UT case document | 0.5d | 2011-11-25 08:00 | 2011-11-25 12:00 | 33 | 0d |
| 35 | 1.1.1.3.9 | Prepare UT scripts | 0.5d | 2011-11-25 13:00 | 2011-11-25 17:00 | 34 | 0d |
| 36 | 1.1.1.3.10 | Perform UT & Fix bugs | 1d | 2011-11-28 08:00 | 2011-11-28 17:00 | 35 | 0d |
| 37 | 1.1.1.4 | **Government Office Region Maintain** | 7d | 2011-11-18 08:00 | 2011-11-28 17:00 |  | 0d |
| 38 | 1.1.1.4.1 | Study requirement | 0.5d | 2011-11-18 08:00 | 2011-11-18 12:00 | 5SS | 0d |
| 39 | 1.1.1.4.2 | Prepare GUI prototypes | 0.5d | 2011-11-18 13:00 | 2011-11-18 17:00 | 38 | 0d |
| 40 | 1.1.1.4.3 | Study design & prepare pseudo codes | 0.75d | 2011-11-21 08:00 | 2011-11-21 15:00 | 39 | 0d |
| 41 | 1.1.1.4.4 | Prepare UT case document | 0.25d | 2011-11-21 15:00 | 2011-11-21 17:00 | 40 | 0d |
| 42 | 1.1.1.4.5 | Code | 2d | 2011-11-22 08:00 | 2011-11-23 17:00 | 38, 41 | 0d |
| 43 | 1.1.1.4.6 | Self code review & Fix bugs | 0.5d | 2011-11-24 08:00 | 2011-11-24 12:00 | 42 | 0d |
| 44 | 1.1.1.4.7 | Peer code review & Fix bugs | 0.5d | 2011-11-24 13:00 | 2011-11-24 17:00 | 43 | 0d |
| 45 | 1.1.1.4.8 | Update UT case document | 0.5d | 2011-11-25 08:00 | 2011-11-25 12:00 | 44 | 0d |
| 46 | 1.1.1.4.9 | Prepare UT scripts | 0.5d | 2011-11-25 13:00 | 2011-11-25 17:00 | 45 | 0d |
| 47 | 1.1.1.4.10 | Perform UT & Fix bugs | 1d | 2011-11-28 08:00 | 2011-11-28 17:00 | 46 | 0d |
| 48 | 1.1.1.5 | **Programme Maintenance** | 7d | 2011-11-18 08:00 | 2011-11-28 17:00 |  | 0d |
| 49 | 1.1.1.5.1 | Study requirement | 0.5d | 2011-11-18 08:00 | 2011-11-18 12:00 | 5SS | 0d |
| 50 | 1.1.1.5.2 | Prepare GUI prototypes | 0.5d | 2011-11-18 13:00 | 2011-11-18 17:00 | 49 | 0d |
| 51 | 1.1.1.5.3 | Study design & prepare pseudo codes | 0.75d | 2011-11-21 08:00 | 2011-11-21 15:00 | 50 | 0d |
| 52 | 1.1.1.5.4 | Prepare UT case document | 0.25d | 2011-11-21 15:00 | 2011-11-21 17:00 | 51 | 0d |
| 53 | 1.1.1.5.5 | Code | 2d | 2011-11-22 08:00 | 2011-11-23 17:00 | 49, 52 | 0d |
| 54 | 1.1.1.5.6 | Self code review & Fix bugs | 0.5d | 2011-11-24 08:00 | 2011-11-24 12:00 | 53 | 0d |
| 55 | 1.1.1.5.7 | Peer code review & Fix bugs | 0.5d | 2011-11-24 13:00 | 2011-11-24 17:00 | 54 | 0d |
| 56 | 1.1.1.5.8 | Update UT case document | 0.5d | 2011-11-25 08:00 | 2011-11-25 12:00 | 55 | 0d |
| 57 | 1.1.1.5.9 | Prepare UT scripts | 0.5d | 2011-11-25 13:00 | 2011-11-25 17:00 | 56 | 0d |
| 58 | 1.1.1.5.10 | Perform UT & Fix bugs | 1d | 2011-11-28 08:00 | 2011-11-28 17:00 | 57 | 0d |

Notes:
- 26: (List, Add, Amend)
- 37: List, Add, Amend, Mark In-active
- 48: List, Add, Amend, Mark In-active

| ID | WBS | Task | Duration | Start | Finish | Predecessors | Total slack |
| --- | --- | --- | --- | --- | --- | --- | --- |
| 59 | 1.1.2 | **Iteration 2 - Organization Maintenance** | 7d | 2011-11-29 08:00 | 2011-12-07 17:00 |  | 0d |
| 60 | 1.1.2.1 | **Organizations Maintenance Part1** | 7d | 2011-11-29 08:00 | 2011-12-07 17:00 |  | 0d |
| 61 | 1.1.2.1.1 | Study requirement | 0.5d | 2011-11-29 08:00 | 2011-11-29 12:00 | 3 | 0d |
| 62 | 1.1.2.1.2 | Prepare GUI prototypes | 0.5d | 2011-11-29 13:00 | 2011-11-29 17:00 | 61 | 0d |
| 63 | 1.1.2.1.3 | Study design & prepare pseudo codes | 0.75d | 2011-11-30 08:00 | 2011-11-30 15:00 | 62 | 0d |
| 64 | 1.1.2.1.4 | Prepare UT case document | 0.25d | 2011-11-30 15:00 | 2011-11-30 17:00 | 63 | 0d |
| 65 | 1.1.2.1.5 | Code | 2d | 2011-12-01 08:00 | 2011-12-02 17:00 | 61, 64 | 0d |
| 66 | 1.1.2.1.6 | Self code review & Fix bugs | 0.5d | 2011-12-05 08:00 | 2011-12-05 12:00 | 65 | 0d |
| 67 | 1.1.2.1.7 | Peer code review & Fix bugs | 0.5d | 2011-12-05 13:00 | 2011-12-05 17:00 | 66 | 0d |
| 68 | 1.1.2.1.8 | Update UT case document | 0.5d | 2011-12-06 08:00 | 2011-12-06 12:00 | 67 | 0d |
| 69 | 1.1.2.1.9 | Prepare UT scripts | 0.5d | 2011-12-06 13:00 | 2011-12-06 17:00 | 68 | 0d |
| 70 | 1.1.2.1.10 | Perform UT & Fix bugs | 1d | 2011-12-07 08:00 | 2011-12-07 17:00 | 69 | 0d |
| 71 | 1.1.2.2 | **Organizations Maintenance Part2** | 7d | 2011-11-29 08:00 | 2011-12-07 17:00 |  | 0d |
| 72 | 1.1.2.2.1 | Study requirement | 0.5d | 2011-11-29 08:00 | 2011-11-29 12:00 | 61SS | 0d |
| 73 | 1.1.2.2.2 | Prepare GUI prototypes | 0.5d | 2011-11-29 13:00 | 2011-11-29 17:00 | 72 | 0d |
| 74 | 1.1.2.2.3 | Study design & prepare pseudo codes | 0.75d | 2011-11-30 08:00 | 2011-11-30 15:00 | 73 | 0d |
| 75 | 1.1.2.2.4 | Prepare UT case document | 0.25d | 2011-11-30 15:00 | 2011-11-30 17:00 | 74 | 0d |
| 76 | 1.1.2.2.5 | Code | 2d | 2011-12-01 08:00 | 2011-12-02 17:00 | 72, 75 | 0d |
| 77 | 1.1.2.2.6 | Self code review & Fix bugs | 0.5d | 2011-12-05 08:00 | 2011-12-05 12:00 | 76 | 0d |
| 78 | 1.1.2.2.7 | Peer code review & Fix bugs | 0.5d | 2011-12-05 13:00 | 2011-12-05 17:00 | 77 | 0d |
| 79 | 1.1.2.2.8 | Update UT case document | 0.5d | 2011-12-06 08:00 | 2011-12-06 12:00 | 78 | 0d |
| 80 | 1.1.2.2.9 | Prepare UT scripts | 0.5d | 2011-12-06 13:00 | 2011-12-06 17:00 | 79 | 0d |
| 81 | 1.1.2.2.10 | Perform UT & Fix bugs | 1d | 2011-12-07 08:00 | 2011-12-07 17:00 | 80 | 0d |
| 82 | 1.1.2.3 | **Directorates Maintenance** | 7d | 2011-11-29 08:00 | 2011-12-07 17:00 |  | 0d |
| 83 | 1.1.2.3.1 | Study requirement | 0.5d | 2011-11-29 08:00 | 2011-11-29 12:00 | 61SS | 0d |
| 84 | 1.1.2.3.2 | Prepare GUI prototypes | 0.5d | 2011-11-29 13:00 | 2011-11-29 17:00 | 83 | 0d |
| 85 | 1.1.2.3.3 | Study design & prepare pseudo codes | 0.75d | 2011-11-30 08:00 | 2011-11-30 15:00 | 84 | 0d |
| 86 | 1.1.2.3.4 | Prepare UT case document | 0.25d | 2011-11-30 15:00 | 2011-11-30 17:00 | 85 | 0d |
| 87 | 1.1.2.3.5 | Code | 2d | 2011-12-01 08:00 | 2011-12-02 17:00 | 83, 86 | 0d |
| 88 | 1.1.2.3.6 | Self code review & Fix bugs | 0.5d | 2011-12-05 08:00 | 2011-12-05 12:00 | 87 | 0d |
| 89 | 1.1.2.3.7 | Peer code review & Fix bugs | 0.5d | 2011-12-05 13:00 | 2011-12-05 17:00 | 88 | 0d |
| 90 | 1.1.2.3.8 | Update UT case document | 0.5d | 2011-12-06 08:00 | 2011-12-06 12:00 | 89 | 0d |
| 91 | 1.1.2.3.9 | Prepare UT scripts | 0.5d | 2011-12-06 13:00 | 2011-12-06 17:00 | 90 | 0d |
| 92 | 1.1.2.3.10 | Perform UT & Fix bugs | 1d | 2011-12-07 08:00 | 2011-12-07 17:00 | 91 | 0d |

Notes:
- 60: List + Amend/Tab5 (Supporting Materials Maintenance)
- 71: Add/Tab1 + Tab2 + Tab3 + Amend/Mark In-active + Tab4 (Premises Link)
- 82: List/Add/Amend (General) + Mark In-active

| ID | WBS | Task | Duration | Start | Finish | Predecessors | Total slack |
| --- | --- | --- | --- | --- | --- | --- | --- |
| 93 | 1.1.2.4 | **Departments Maintenance** | 7d | 2011-11-29 08:00 | 2011-12-07 17:00 |  | 0d |
| 94 | 1.1.2.4.1 | Study requirement | 0.5d | 2011-11-29 08:00 | 2011-11-29 12:00 | 61SS | 0d |
| 95 | 1.1.2.4.2 | Prepare GUI prototypes | 0.5d | 2011-11-29 13:00 | 2011-11-29 17:00 | 94 | 0d |
| 96 | 1.1.2.4.3 | Study design & prepare pseudo codes | 0.75d | 2011-11-30 08:00 | 2011-11-30 15:00 | 95 | 0d |
| 97 | 1.1.2.4.4 | Prepare UT case document | 0.25d | 2011-11-30 15:00 | 2011-11-30 17:00 | 96 | 0d |
| 98 | 1.1.2.4.5 | Code | 2d | 2011-12-01 08:00 | 2011-12-02 17:00 | 94, 97 | 0d |
| 99 | 1.1.2.4.6 | Self code review & Fix bugs | 0.5d | 2011-12-05 08:00 | 2011-12-05 12:00 | 98 | 0d |
| 100 | 1.1.2.4.7 | Peer code review & Fix bugs | 0.5d | 2011-12-05 13:00 | 2011-12-05 17:00 | 99 | 0d |
| 101 | 1.1.2.4.8 | Update UT case document | 0.5d | 2011-12-06 08:00 | 2011-12-06 12:00 | 100 | 0d |
| 102 | 1.1.2.4.9 | Prepare UT scripts | 0.5d | 2011-12-06 13:00 | 2011-12-06 17:00 | 101 | 0d |
| 103 | 1.1.2.4.10 | Perform UT & Fix bugs | 1d | 2011-12-07 08:00 | 2011-12-07 17:00 | 102 | 0d |
| 104 | 1.1.2.5 | **Teams Maintenance** | 7d | 2011-11-29 08:00 | 2011-12-07 17:00 |  | 0d |
| 105 | 1.1.2.5.1 | Study requirement | 0.5d | 2011-11-29 08:00 | 2011-11-29 12:00 | 61SS | 0d |
| 106 | 1.1.2.5.2 | Prepare GUI prototypes | 0.5d | 2011-11-29 13:00 | 2011-11-29 17:00 | 105 | 0d |
| 107 | 1.1.2.5.3 | Study design & prepare pseudo codes | 0.75d | 2011-11-30 08:00 | 2011-11-30 15:00 | 106 | 0d |
| 108 | 1.1.2.5.4 | Prepare UT case document | 0.25d | 2011-11-30 15:00 | 2011-11-30 17:00 | 107 | 0d |
| 109 | 1.1.2.5.5 | Code | 2d | 2011-12-01 08:00 | 2011-12-02 17:00 | 105, 108 | 0d |
| 110 | 1.1.2.5.6 | Self code review & Fix bugs | 0.5d | 2011-12-05 08:00 | 2011-12-05 12:00 | 109 | 0d |
| 111 | 1.1.2.5.7 | Peer code review & Fix bugs | 0.5d | 2011-12-05 13:00 | 2011-12-05 17:00 | 110 | 0d |
| 112 | 1.1.2.5.8 | Update UT case document | 0.5d | 2011-12-06 08:00 | 2011-12-06 12:00 | 111 | 0d |
| 113 | 1.1.2.5.9 | Prepare UT scripts | 0.5d | 2011-12-06 13:00 | 2011-12-06 17:00 | 112 | 0d |
| 114 | 1.1.2.5.10 | Perform UT & Fix bugs | 1d | 2011-12-07 08:00 | 2011-12-07 17:00 | 113 | 0d |
| 115 | 1.1.3 | **Iteration 3 - Services, Geography2** | 8d | 2011-12-08 08:00 | 2011-12-19 17:00 |  | 0d |
| 116 | 1.1.3.1 | **Services Maintenance Part1** | 7d | 2011-12-08 08:00 | 2011-12-16 17:00 |  | 0d |
| 117 | 1.1.3.1.1 | Study requirement | 0.5d | 2011-12-08 08:00 | 2011-12-08 12:00 | 59 | 0d |
| 118 | 1.1.3.1.2 | Prepare GUI prototypes | 0.5d | 2011-12-08 13:00 | 2011-12-08 17:00 | 117 | 0d |
| 119 | 1.1.3.1.3 | Study design & prepare pseudo codes | 0.75d | 2011-12-09 08:00 | 2011-12-09 15:00 | 118 | 0d |
| 120 | 1.1.3.1.4 | Prepare UT case document | 0.25d | 2011-12-09 15:00 | 2011-12-09 17:00 | 119 | 0d |
| 121 | 1.1.3.1.5 | Code | 2d | 2011-12-12 08:00 | 2011-12-13 17:00 | 117, 120 | 0d |
| 122 | 1.1.3.1.6 | Self code review & Fix bugs | 0.5d | 2011-12-14 08:00 | 2011-12-14 12:00 | 121 | 0d |
| 123 | 1.1.3.1.7 | Peer code review & Fix bugs | 0.5d | 2011-12-14 13:00 | 2011-12-14 17:00 | 122 | 0d |
| 124 | 1.1.3.1.8 | Update UT case document | 0.5d | 2011-12-15 08:00 | 2011-12-15 12:00 | 123 | 0d |
| 125 | 1.1.3.1.9 | Prepare UT scripts | 0.5d | 2011-12-15 13:00 | 2011-12-15 17:00 | 124 | 0d |
| 126 | 1.1.3.1.10 | Perform UT & Fix bugs | 1d | 2011-12-16 08:00 | 2011-12-16 17:00 | 125 | 0d |

Notes:
- 93: List/Add/Amend (General) + Mark In-active
- 104: List/Add/Amend + Mark In-active
- 116: List + Add-Copy-Amend/Tab1 + Tab5-Funding

| ID | WBS | Task | Duration | Start | Finish | Predecessors | Total slack |
| --- | --- | --- | --- | --- | --- | --- | --- |
| 127 | 1.1.3.2 | **Services Maintenance Part2** | 7d | 2011-12-08 08:00 | 2011-12-16 17:00 |  | 0d |
| 128 | 1.1.3.2.1 | Study requirement | 0.5d | 2011-12-08 08:00 | 2011-12-08 12:00 | 117SS | 0d |
| 129 | 1.1.3.2.2 | Prepare GUI prototypes | 0.5d | 2011-12-08 13:00 | 2011-12-08 17:00 | 128 | 0d |
| 130 | 1.1.3.2.3 | Study design & prepare pseudo codes | 0.75d | 2011-12-09 08:00 | 2011-12-09 15:00 | 129 | 0d |
| 131 | 1.1.3.2.4 | Prepare UT case document | 0.25d | 2011-12-09 15:00 | 2011-12-09 17:00 | 130 | 0d |
| 132 | 1.1.3.2.5 | Code | 2d | 2011-12-12 08:00 | 2011-12-13 17:00 | 128, 131 | 0d |
| 133 | 1.1.3.2.6 | Self code review & Fix bugs | 0.5d | 2011-12-14 08:00 | 2011-12-14 12:00 | 132 | 0d |
| 134 | 1.1.3.2.7 | Peer code review & Fix bugs | 0.5d | 2011-12-14 13:00 | 2011-12-14 17:00 | 133 | 0d |
| 135 | 1.1.3.2.8 | Update UT case document | 0.5d | 2011-12-15 08:00 | 2011-12-15 12:00 | 134 | 0d |
| 136 | 1.1.3.2.9 | Prepare UT scripts | 0.5d | 2011-12-15 13:00 | 2011-12-15 17:00 | 135 | 0d |
| 137 | 1.1.3.2.10 | Perform UT & Fix bugs | 1d | 2011-12-16 08:00 | 2011-12-16 17:00 | 136 | 0d |
| 138 | 1.1.3.3 | **Services Maintenance Part3** | 7d | 2011-12-08 08:00 | 2011-12-16 17:00 |  | 0d |
| 139 | 1.1.3.3.1 | Study requirement | 0.5d | 2011-12-08 08:00 | 2011-12-08 12:00 | 117SS | 0d |
| 140 | 1.1.3.3.2 | Prepare GUI prototypes | 0.5d | 2011-12-08 13:00 | 2011-12-08 17:00 | 139 | 0d |
| 141 | 1.1.3.3.3 | Study design & prepare pseudo codes | 0.75d | 2011-12-09 08:00 | 2011-12-09 15:00 | 140 | 0d |
| 142 | 1.1.3.3.4 | Prepare UT case document | 0.25d | 2011-12-09 15:00 | 2011-12-09 17:00 | 141 | 0d |
| 143 | 1.1.3.3.5 | Code | 2d | 2011-12-12 08:00 | 2011-12-13 17:00 | 139, 142 | 0d |
| 144 | 1.1.3.3.6 | Self code review & Fix bugs | 0.5d | 2011-12-14 08:00 | 2011-12-14 12:00 | 143 | 0d |
| 145 | 1.1.3.3.7 | Peer code review & Fix bugs | 0.5d | 2011-12-14 13:00 | 2011-12-14 17:00 | 144 | 0d |
| 146 | 1.1.3.3.8 | Update UT case document | 0.5d | 2011-12-15 08:00 | 2011-12-15 12:00 | 145 | 0d |
| 147 | 1.1.3.3.9 | Prepare UT scripts | 0.5d | 2011-12-15 13:00 | 2011-12-15 17:00 | 146 | 0d |
| 148 | 1.1.3.3.10 | Perform UT & Fix bugs | 1d | 2011-12-16 08:00 | 2011-12-16 17:00 | 147 | 0d |
| 149 | 1.1.3.4 | **Services Maintenance Part4** | 7d | 2011-12-08 08:00 | 2011-12-16 17:00 |  | 0d |
| 150 | 1.1.3.4.1 | Study requirement | 0.5d | 2011-12-08 08:00 | 2011-12-08 12:00 | 117SS | 0d |
| 151 | 1.1.3.4.2 | Prepare GUI prototypes | 0.5d | 2011-12-08 13:00 | 2011-12-08 17:00 | 150 | 0d |
| 152 | 1.1.3.4.3 | Study design & prepare pseudo codes | 0.75d | 2011-12-09 08:00 | 2011-12-09 15:00 | 151 | 0d |
| 153 | 1.1.3.4.4 | Prepare UT case document | 0.25d | 2011-12-09 15:00 | 2011-12-09 17:00 | 152 | 0d |
| 154 | 1.1.3.4.5 | Code | 2d | 2011-12-12 08:00 | 2011-12-13 17:00 | 150, 153 | 0d |
| 155 | 1.1.3.4.6 | Self code review & Fix bugs | 0.5d | 2011-12-14 08:00 | 2011-12-14 12:00 | 154 | 0d |
| 156 | 1.1.3.4.7 | Peer code review & Fix bugs | 0.5d | 2011-12-14 13:00 | 2011-12-14 17:00 | 155 | 0d |
| 157 | 1.1.3.4.8 | Update UT case document | 0.5d | 2011-12-15 08:00 | 2011-12-15 12:00 | 156 | 0d |
| 158 | 1.1.3.4.9 | Prepare UT scripts | 0.5d | 2011-12-15 13:00 | 2011-12-15 17:00 | 157 | 0d |
| 159 | 1.1.3.4.10 | Perform UT & Fix bugs | 1d | 2011-12-16 08:00 | 2011-12-16 17:00 | 158 | 0d |

Notes:
- 127: Add-Copy-Amend/Tab2, Tab3,Tab4-Contract
- 138: Amend/Organization Tab + Mark in-active
- 149: Amend/Premises Tab

| ID | WBS | Task | Duration | Start | Finish | Predecessors | Total slack | Free slack |
| --- | --- | --- | --- | --- | --- | --- | --- | --- |
| 160 | 1.1.3.5 | **Geography Maintenance** | 7d | 2011-12-08 08:00 | 2011-12-16 17:00 |  | 1d |  |
| 161 | 1.1.3.5.1 | Study requirement | 0.5d | 2011-12-08 08:00 | 2011-12-08 12:00 | 117SS | 1d | 0d |
| 162 | 1.1.3.5.2 | Prepare GUI prototypes | 0.5d | 2011-12-08 13:00 | 2011-12-08 17:00 | 161 | 1d | 0d |
| 163 | 1.1.3.5.3 | Study design & prepare pseudo codes | 0.75d | 2011-12-09 08:00 | 2011-12-09 15:00 | 162 | 1d | 0d |
| 164 | 1.1.3.5.4 | Prepare UT case document | 0.25d | 2011-12-09 15:00 | 2011-12-09 17:00 | 163 | 1d | 0d |
| 165 | 1.1.3.5.5 | Code | 2d | 2011-12-12 08:00 | 2011-12-13 17:00 | 161, 164 | 1d | 0d |
| 166 | 1.1.3.5.6 | Self code review & Fix bugs | 0.5d | 2011-12-14 08:00 | 2011-12-14 12:00 | 165 | 1d | 0d |
| 167 | 1.1.3.5.7 | Peer code review & Fix bugs | 0.5d | 2011-12-14 13:00 | 2011-12-14 17:00 | 166 | 1d | 0d |
| 168 | 1.1.3.5.8 | Update UT case document | 0.5d | 2011-12-15 08:00 | 2011-12-15 12:00 | 167 | 1d | 0d |
| 169 | 1.1.3.5.9 | Prepare UT scripts | 0.5d | 2011-12-15 13:00 | 2011-12-15 17:00 | 168 | 1d | 0d |
| 170 | 1.1.3.5.10 | Perform UT & Fix bugs | 1d | 2011-12-16 08:00 | 2011-12-16 17:00 | 169 | 1d |  |
| 171 | 1.1.3.6 | Milestone Day3 | 1d | 2011-12-19 08:00 | 2011-12-19 17:00 | 116, 127, 138, 149 | 0d |  |
| 172 | 1.1.4 | **Iteration 4 - Premises** | 8d | 2011-12-20 08:00 | 2011-12-29 17:00 |  | 0d |  |
| 173 | 1.1.4.1 | **Premises Maintenance Part1** | 7d | 2011-12-20 08:00 | 2011-12-28 17:00 |  | 0d |  |
| 174 | 1.1.4.1.1 | Study requirement | 0.5d | 2011-12-20 08:00 | 2011-12-20 12:00 | 115 | 0d |  |
| 175 | 1.1.4.1.2 | Prepare GUI prototypes | 0.5d | 2011-12-20 13:00 | 2011-12-20 17:00 | 174 | 0d |  |
| 176 | 1.1.4.1.3 | Study design & prepare pseudo codes | 0.75d | 2011-12-21 08:00 | 2011-12-21 15:00 | 175 | 0d |  |
| 177 | 1.1.4.1.4 | Prepare UT case document | 0.25d | 2011-12-21 15:00 | 2011-12-21 17:00 | 176 | 0d |  |
| 178 | 1.1.4.1.5 | Code | 2d | 2011-12-22 08:00 | 2011-12-23 17:00 | 174, 177 | 0d |  |
| 179 | 1.1.4.1.6 | Self code review & Fix bugs | 0.5d | 2011-12-26 08:00 | 2011-12-26 12:00 | 178 | 0d |  |
| 180 | 1.1.4.1.7 | Peer code review & Fix bugs | 0.5d | 2011-12-26 13:00 | 2011-12-26 17:00 | 179 | 0d |  |
| 181 | 1.1.4.1.8 | Update UT case document | 0.5d | 2011-12-27 08:00 | 2011-12-27 12:00 | 180 | 0d |  |
| 182 | 1.1.4.1.9 | Prepare UT scripts | 0.5d | 2011-12-27 13:00 | 2011-12-27 17:00 | 181 | 0d |  |
| 183 | 1.1.4.1.10 | Perform UT & Fix bugs | 1d | 2011-12-28 08:00 | 2011-12-28 17:00 | 182 | 0d |  |

Notes:
- 160: List, Add, Amend, Mark In-active: Trust Regions, Trust Districts
- 173: List, Add-Amend/Tab1 + Tab4 + Mark In-active

| ID | WBS | Task | Duration | Start | Finish | Predecessors | Total slack |
| --- | --- | --- | --- | --- | --- | --- | --- |
| 184 | 1.1.4.2 | **Premises Maintenance Part2** | 7d | 2011-12-20 08:00 | 2011-12-28 17:00 |  | 0d |
| 185 | 1.1.4.2.1 | Study requirement | 0.5d | 2011-12-20 08:00 | 2011-12-20 12:00 | 174SS | 0d |
| 186 | 1.1.4.2.2 | Prepare GUI prototypes | 0.5d | 2011-12-20 13:00 | 2011-12-20 17:00 | 185 | 0d |
| 187 | 1.1.4.2.3 | Study design & prepare pseudo codes | 0.75d | 2011-12-21 08:00 | 2011-12-21 15:00 | 186 | 0d |
| 188 | 1.1.4.2.4 | Prepare UT case document | 0.25d | 2011-12-21 15:00 | 2011-12-21 17:00 | 187 | 0d |
| 189 | 1.1.4.2.5 | Code | 2d | 2011-12-22 08:00 | 2011-12-23 17:00 | 185, 188 | 0d |
| 190 | 1.1.4.2.6 | Self code review & Fix bugs | 0.5d | 2011-12-26 08:00 | 2011-12-26 12:00 | 189 | 0d |
| 191 | 1.1.4.2.7 | Peer code review & Fix bugs | 0.5d | 2011-12-26 13:00 | 2011-12-26 17:00 | 190 | 0d |
| 192 | 1.1.4.2.8 | Update UT case document | 0.5d | 2011-12-27 08:00 | 2011-12-27 12:00 | 191 | 0d |
| 193 | 1.1.4.2.9 | Prepare UT scripts | 0.5d | 2011-12-27 13:00 | 2011-12-27 17:00 | 192 | 0d |
| 194 | 1.1.4.2.10 | Perform UT & Fix bugs | 1d | 2011-12-28 08:00 | 2011-12-28 17:00 | 193 | 0d |
| 195 | 1.1.4.3 | **Premises Maintenance Part3** | 7d | 2011-12-20 08:00 | 2011-12-28 17:00 |  | 0d |
| 196 | 1.1.4.3.1 | Study requirement | 0.5d | 2011-12-20 08:00 | 2011-12-20 12:00 | 174SS | 0d |
| 197 | 1.1.4.3.2 | Prepare GUI prototypes | 0.5d | 2011-12-20 13:00 | 2011-12-20 17:00 | 196 | 0d |
| 198 | 1.1.4.3.3 | Study design & prepare pseudo codes | 0.75d | 2011-12-21 08:00 | 2011-12-21 15:00 | 197 | 0d |
| 199 | 1.1.4.3.4 | Prepare UT case document | 0.25d | 2011-12-21 15:00 | 2011-12-21 17:00 | 198 | 0d |
| 200 | 1.1.4.3.5 | Code | 2d | 2011-12-22 08:00 | 2011-12-23 17:00 | 196, 199 | 0d |
| 201 | 1.1.4.3.6 | Self code review & Fix bugs | 0.5d | 2011-12-26 08:00 | 2011-12-26 12:00 | 200 | 0d |
| 202 | 1.1.4.3.7 | Peer code review & Fix bugs | 0.5d | 2011-12-26 13:00 | 2011-12-26 17:00 | 201 | 0d |
| 203 | 1.1.4.3.8 | Update UT case document | 0.5d | 2011-12-27 08:00 | 2011-12-27 12:00 | 202 | 0d |
| 204 | 1.1.4.3.9 | Prepare UT scripts | 0.5d | 2011-12-27 13:00 | 2011-12-27 17:00 | 203 | 0d |
| 205 | 1.1.4.3.10 | Perform UT & Fix bugs | 1d | 2011-12-28 08:00 | 2011-12-28 17:00 | 204 | 0d |
| 206 | 1.1.4.4 | **Premises Maintenance Part4** | 7d | 2011-12-20 08:00 | 2011-12-28 17:00 |  | 0d |
| 207 | 1.1.4.4.1 | Study requirement | 0.5d | 2011-12-20 08:00 | 2011-12-20 12:00 | 174SS | 0d |
| 208 | 1.1.4.4.2 | Prepare GUI prototypes | 0.5d | 2011-12-20 13:00 | 2011-12-20 17:00 | 207 | 0d |
| 209 | 1.1.4.4.3 | Study design & prepare pseudo codes | 0.75d | 2011-12-21 08:00 | 2011-12-21 15:00 | 208 | 0d |
| 210 | 1.1.4.4.4 | Prepare UT case document | 0.25d | 2011-12-21 15:00 | 2011-12-21 17:00 | 209 | 0d |
| 211 | 1.1.4.4.5 | Code | 2d | 2011-12-22 08:00 | 2011-12-23 17:00 | 207, 210 | 0d |
| 212 | 1.1.4.4.6 | Self code review & Fix bugs | 0.5d | 2011-12-26 08:00 | 2011-12-26 12:00 | 211 | 0d |
| 213 | 1.1.4.4.7 | Peer code review & Fix bugs | 0.5d | 2011-12-26 13:00 | 2011-12-26 17:00 | 212 | 0d |
| 214 | 1.1.4.4.8 | Update UT case document | 0.5d | 2011-12-27 08:00 | 2011-12-27 12:00 | 213 | 0d |
| 215 | 1.1.4.4.9 | Prepare UT scripts | 0.5d | 2011-12-27 13:00 | 2011-12-27 17:00 | 214 | 0d |
| 216 | 1.1.4.4.10 | Perform UT & Fix bugs | 1d | 2011-12-28 08:00 | 2011-12-28 17:00 | 215 | 0d |

Notes:
- 184: Add-Amend/Tab2 + Tab3
- 195: Add-Amend/Tab4-Facility Maintenance (List, Add, Amend, Mark In-active)
- 206: Add-Amend/Tab5-Volunteering Opportunity (List, Add, Amend, Mark In-active)

| ID | WBS | Task | Duration | Start | Finish | Predecessors | Total slack | Free slack |
| --- | --- | --- | --- | --- | --- | --- | --- | --- |
| 217 | 1.1.4.5 | **Premises Maintenance Part5** | 7d | 2011-12-20 08:00 | 2011-12-28 17:00 |  | 1d |  |
| 218 | 1.1.4.5.1 | Study requirement | 0.5d | 2011-12-20 08:00 | 2011-12-20 12:00 | 174SS | 1d | 0d |
| 219 | 1.1.4.5.2 | Prepare GUI prototypes | 0.5d | 2011-12-20 13:00 | 2011-12-20 17:00 | 218 | 1d | 0d |
| 220 | 1.1.4.5.3 | Study design & prepare pseudo codes | 0.75d | 2011-12-21 08:00 | 2011-12-21 15:00 | 219 | 1d | 0d |
| 221 | 1.1.4.5.4 | Prepare UT case document | 0.25d | 2011-12-21 15:00 | 2011-12-21 17:00 | 220 | 1d | 0d |
| 222 | 1.1.4.5.5 | Code | 2d | 2011-12-22 08:00 | 2011-12-23 17:00 | 218, 221 | 1d | 0d |
| 223 | 1.1.4.5.6 | Self code review & Fix bugs | 0.5d | 2011-12-26 08:00 | 2011-12-26 12:00 | 222 | 1d | 0d |
| 224 | 1.1.4.5.7 | Peer code review & Fix bugs | 0.5d | 2011-12-26 13:00 | 2011-12-26 17:00 | 223 | 1d | 0d |
| 225 | 1.1.4.5.8 | Update UT case document | 0.5d | 2011-12-27 08:00 | 2011-12-27 12:00 | 224 | 1d | 0d |
| 226 | 1.1.4.5.9 | Prepare UT scripts | 0.5d | 2011-12-27 13:00 | 2011-12-27 17:00 | 225 | 1d | 0d |
| 227 | 1.1.4.5.10 | Perform UT & Fix bugs | 1d | 2011-12-28 08:00 | 2011-12-28 17:00 | 226 | 1d |  |
| 228 | 1.1.4.6 | Milestone Day 4 | 1d | 2011-12-29 08:00 | 2011-12-29 17:00 | 173, 184, 195, 206 | 0d |  |
| 229 | 1.2 | **Termination** | 1d | 2011-12-30 08:00 | 2011-12-30 17:00 |  | 0d |  |
| 230 | 1.2.1 | Project Package, Evaluations | 0.75d | 2011-12-30 08:00 | 2011-12-30 15:00 | 2 | 0d |  |
| 231 | 1.2.2 | Post-mortem Meeting | 0.25d | 2011-12-30 15:00 | 2011-12-30 17:00 | 230 | 0d |  |

Notes:
- 217: Add-Amend/Tab6-Minor Works Project (List, Add, Amend, Mark In-active)
