# ShawTrust_SD_Master_Plan_v0.2

Schedule from MS Project, 2011-11-18 to 2012-01-03.
Sony Electronics, Inc.

## Calendars

- Standard: Mon-Fri 08:00-12:00, 13:00-17:00; Sat-Sun off.

## Resources

| Resource |
| --- |
| dungnm |
| hant21 |
| hungnm |
| phongtv |
| nhanld |
| phong |

## Schedule

| ID | WBS | Task | Duration | Start | Finish | Predecessors | Total slack | Resources | Work |
| --- | --- | --- | --- | --- | --- | --- | --- | --- | --- |
| 1 | 1 | **MockProject** | 32.77d | 2011-11-18 08:00 | 2012-01-03 15:08 |  | 0d |  | 1868h |
| 2 | 1.1 | **Initiation** | 1d | 2011-11-18 08:00 | 2011-11-18 17:00 |  | 0d |  |  |
| 3 | 1.1.1 | Project kick-off & introduction | 0.25d | 2011-11-18 08:00 | 2011-11-18 10:00 |  | 0d |  |  |
| 4 | 1.1.2 | Preparation & Study overview requirements | 0.5d | 2011-11-18 10:00 | 2011-11-18 15:00 | 3 | 0d |  |  |
| 5 | 1.1.3 | Requirement brainstorming | 0.25d | 2011-11-18 15:00 | 2011-11-18 17:00 | 4 | 0d |  |  |
| 6 | 1.2 | **Create document & Learning** | 10.1d | 2011-11-21 08:00 | 2011-12-05 08:48 |  | 0d |  | 348h |
| 7 | 1.2.1 | **Build up work flow for module** | 2d | 2011-11-21 08:00 | 2011-11-22 17:00 |  | 0d |  | 64h |
| 8 | 1.2.1.1 | Build up work flow for module: 6.1,6.6, 6.7, 6.8 | 1.5d | 2011-11-21 08:00 | 2011-11-22 12:00 | 5 | 0d | nhanld | 12h |
| 9 | 1.2.1.2 | Build up work flow for module: 6.2 | 2d | 2011-11-21 08:00 | 2011-11-22 17:00 | 8SS | 29.77d | dungnm | 16h |
| 10 | 1.2.1.3 | Build up work flow for module: 6.3 | 1.5d | 2011-11-21 08:00 | 2011-11-22 12:00 | 8SS | 30.27d | hungnm | 12h |
| 11 | 1.2.1.4 | Build up work flow for module: 6.4 | 1.5d | 2011-11-21 08:00 | 2011-11-22 12:00 | 8SS | 30.27d | hant21 | 12h |
| 12 | 1.2.1.5 | Build up work flow for module: 6.5 | 1.5d | 2011-11-21 08:00 | 2011-11-22 12:00 | 8SS | 30.27d | phongtv | 12h |
| 13 | 1.2.2 | Template for prototype | 1.5d | 2011-11-22 13:00 | 2011-11-23 17:00 | 8 | 0d | nhanld | 12h |
| 14 | 1.2.3 | Create Q&A document, Rick and issues document | 0.5d | 2011-11-22 13:00 | 2011-11-22 17:00 | 13SS | 29.77d | dungnm | 4h |
| 15 | 1.2.4 | Create project plan, integrate work flow | 0.5d | 2011-11-22 13:00 | 2011-11-22 17:00 | 13SS | 29.77d | hant21 | 4h |
| 16 | 1.2.5 | Learning Spring dependency | 0.5d | 2011-11-22 13:00 | 2011-11-22 17:00 | 13SS | 29.77d | hungnm | 4h |
| 17 | 1.2.6 | Leaning Hibernate | 0.5d | 2011-11-22 13:00 | 2011-11-22 17:00 | 13SS | 29.77d | phongtv | 4h |
| 18 | 1.2.7 | **Build up prototype** | 1.5d | 2011-11-24 08:00 | 2011-11-25 12:00 |  | 0d |  | 60h |
| 19 | 1.2.7.1 | Build up prototype for module: 6.1,6.6, 6.7, 6.8 | 1.5d | 2011-11-24 08:00 | 2011-11-25 12:00 | 13 | 0d | nhanld | 12h |
| 20 | 1.2.7.2 | Build up prototype for module: 6.2 | 1.5d | 2011-11-24 08:00 | 2011-11-25 12:00 | 19SS | 27.27d | dungnm | 12h |
| 21 | 1.2.7.3 | Build up prototype for module: 6.3 | 1.5d | 2011-11-24 08:00 | 2011-11-25 12:00 | 19SS | 27.27d | dungnm | 12h |
| 22 | 1.2.7.4 | Build up prototype for module: 6.4 | 1.5d | 2011-11-24 08:00 | 2011-11-25 12:00 | 19SS | 27.27d | hant21 | 12h |
| 23 | 1.2.7.5 | Build up prototype for module: 6.5 | 1.5d | 2011-11-24 08:00 | 2011-11-25 12:00 | 19SS | 27.27d | phongtv | 12h |
| 24 | 1.2.8 | Learning Spring dependency | 2d | 2011-11-25 13:00 | 2011-11-29 12:00 | 19 | 0d | dungnm; hungnm | 32h |
| 25 | 1.2.9 | Learning Hibernate | 2d | 2011-11-25 13:00 | 2011-11-29 12:00 | 24SS | 25.27d | hant21; phongtv | 32h |
| 26 | 1.2.10 | Demo hibernate | 0.25d | 2011-11-29 13:00 | 2011-11-29 15:00 | 24 | 0d | hant21; phong | 4h |
| 27 | 1.2.11 | Demo spring | 0.25d | 2011-11-29 15:00 | 2011-11-29 17:00 | 26 | 0d | dungnm; hungnm | 4h |
| 28 | 1.2.12 | Design database | 0.1d | 2011-11-30 08:00 | 2011-11-30 08:48 | 27 | 0d | dungnm; hungnm; nhanld; phongtv; hant21 | 4h |
| 29 | 1.2.13 | High level design | 1d | 2011-11-30 08:48 | 2011-12-01 08:48 | 28 | 0d | dungnm; hungnm; nhanld; phongtv; hant21 | 40h |
| 30 | 1.2.14 | Learning control layout | 2d | 2011-12-01 08:48 | 2011-12-05 08:48 | 29 | 0d | dungnm; nhanld | 32h |
| 31 | 1.2.15 | Learning struts2, spring, hibernate integration | 2d | 2011-12-01 08:48 | 2011-12-05 08:48 | 30SS | 0d | hant21; phongtv; hungnm | 48h |

| ID | WBS | Task | Duration | Start | Finish | Predecessors | Total slack | Free slack | Resources | Work |
| --- | --- | --- | --- | --- | --- | --- | --- | --- | --- | --- |
| 32 | 1.3 | **Construction** | 21.67d | 2011-12-05 08:48 | 2012-01-03 15:08 |  | 0d |  |  | 1520h |
| 33 | 1.3.1 | **Iteration 1 - Georaphy, contact** | 5d | 2011-12-05 08:48 | 2011-12-12 08:48 |  | 0d |  |  | 400h |
| 34 | 1.3.1.1 | **Contact** | 5d | 2011-12-05 08:48 | 2011-12-12 08:48 |  | 0d |  | nhanld; dungnm | 160h |
| 35 | 1.3.1.1.1 | Class, Sequence digaram | 0.5d | 2011-12-05 08:48 | 2011-12-05 13:48 | 31 | 0d |  | nhanld; dungnm | 8h |
| 36 | 1.3.1.1.2 | Prepare for Unit testing | 0.5d | 2011-12-05 13:48 | 2011-12-06 08:48 | 35 | 0d |  | nhanld; dungnm | 8h |
| 37 | 1.3.1.1.3 | Code | 2d | 2011-12-06 08:48 | 2011-12-08 08:48 | 36 | 0d |  | nhanld; dungnm | 32h |
| 38 | 1.3.1.1.4 | Peer code review | 0.5d | 2011-12-08 08:48 | 2011-12-08 13:48 | 37 | 0d |  | nhanld; dungnm | 8h |
| 39 | 1.3.1.1.5 | Prepare UT script | 0.5d | 2011-12-08 13:48 | 2011-12-09 08:48 | 38 | 0d |  | nhanld; dungnm | 8h |
| 40 | 1.3.1.1.6 | Perform UT and fix bug | 1d | 2011-12-09 08:48 | 2011-12-12 08:48 | 39 | 0d |  | nhanld; dungnm | 16h |
| 41 | 1.3.1.2 | **Trust Region** | 5d | 2011-12-05 08:48 | 2011-12-12 08:48 |  | 16.67d |  | hant21 | 80h |
| 42 | 1.3.1.2.1 | Class, Sequence digaram | 0.5d | 2011-12-05 08:48 | 2011-12-05 13:48 | 35SS | 16.67d | 0d | hant21 | 4h |
| 43 | 1.3.1.2.2 | Prepare for Unit testing | 0.5d | 2011-12-05 13:48 | 2011-12-06 08:48 | 42 | 16.67d | 0d | hant21 | 4h |
| 44 | 1.3.1.2.3 | Code | 2d | 2011-12-06 08:48 | 2011-12-08 08:48 | 43 | 16.67d | 0d | hant21 | 16h |
| 45 | 1.3.1.2.4 | Peer code review | 0.5d | 2011-12-08 08:48 | 2011-12-08 13:48 | 44 | 16.67d | 0d | hant21 | 4h |
| 46 | 1.3.1.2.5 | Prepare UT script | 0.5d | 2011-12-08 13:48 | 2011-12-09 08:48 | 45 | 16.67d | 0d | hant21 | 4h |
| 47 | 1.3.1.2.6 | Perform UT and fix bug | 1d | 2011-12-09 08:48 | 2011-12-12 08:48 | 46 | 16.67d |  | hant21 | 8h |
| 48 | 1.3.1.3 | **Trust District** | 5d | 2011-12-05 08:48 | 2011-12-12 08:48 |  | 16.67d |  | phongtv | 80h |
| 49 | 1.3.1.3.1 | Class, Sequence digaram | 0.5d | 2011-12-05 08:48 | 2011-12-05 13:48 | 35SS | 16.67d | 0d | phongtv | 4h |
| 50 | 1.3.1.3.2 | Prepare for Unit testing | 0.5d | 2011-12-05 13:48 | 2011-12-06 08:48 | 49 | 16.67d | 0d | phongtv | 4h |
| 51 | 1.3.1.3.3 | Code | 2d | 2011-12-06 08:48 | 2011-12-08 08:48 | 50 | 16.67d | 0d | phongtv | 16h |
| 52 | 1.3.1.3.4 | Peer code review | 0.5d | 2011-12-08 08:48 | 2011-12-08 13:48 | 51 | 16.67d | 0d | phongtv | 4h |
| 53 | 1.3.1.3.5 | Prepare UT script | 0.5d | 2011-12-08 13:48 | 2011-12-09 08:48 | 52 | 16.67d | 0d | phongtv | 4h |
| 54 | 1.3.1.3.6 | Perform UT and fix bug | 1d | 2011-12-09 08:48 | 2011-12-12 08:48 | 53 | 16.67d |  | phongtv | 8h |
| 55 | 1.3.1.4 | **Gov Office** | 5d | 2011-12-05 08:48 | 2011-12-12 08:48 |  | 16.67d |  | hungnm | 80h |
| 56 | 1.3.1.4.1 | Class, Sequence digaram | 0.5d | 2011-12-05 08:48 | 2011-12-05 13:48 | 35SS | 16.67d | 0d | phongtv | 4h |
| 57 | 1.3.1.4.2 | Prepare for Unit testing | 0.5d | 2011-12-05 13:48 | 2011-12-06 08:48 | 56 | 16.67d | 0d | phongtv | 4h |
| 58 | 1.3.1.4.3 | Code | 2d | 2011-12-06 08:48 | 2011-12-08 08:48 | 57 | 16.67d | 0d | phongtv | 16h |
| 59 | 1.3.1.4.4 | Peer code review | 0.5d | 2011-12-08 08:48 | 2011-12-08 13:48 | 58 | 16.67d | 0d | phongtv | 4h |
| 60 | 1.3.1.4.5 | Prepare UT script | 0.5d | 2011-12-08 13:48 | 2011-12-09 08:48 | 59 | 16.67d | 0d | phongtv | 4h |
| 61 | 1.3.1.4.6 | Perform UT and fix bug | 1d | 2011-12-09 08:48 | 2011-12-12 08:48 | 60 | 16.67d |  | phongtv | 8h |

Notes:
- 34: (List, Add, Amend)
- 41: (List, Add, Amend, Mark)
- 48: (List, Add, Amend, Mark)
- 55: (List, Detail)

| ID | WBS | Task | Duration | Start | Finish | Predecessors | Total slack | Free slack | Resources | Work |
| --- | --- | --- | --- | --- | --- | --- | --- | --- | --- | --- |
| 62 | 1.3.2 | **Iteration 2 - Organization Maintenance** | 4d | 2011-12-12 08:48 | 2011-12-16 08:48 |  | 0d |  |  | 320h |
| 63 | 1.3.2.1 | **Organization** | 4d | 2011-12-12 08:48 | 2011-12-16 08:48 |  | 0d |  | dungnm | 64h |
| 64 | 1.3.2.1.1 | Class, Sequence digaram | 0.5d | 2011-12-12 08:48 | 2011-12-12 13:48 | 40 | 0d |  | dungnm | 4h |
| 65 | 1.3.2.1.2 | Prepare for Unit testing | 0.5d | 2011-12-12 13:48 | 2011-12-13 08:48 | 64 | 0d |  | dungnm | 4h |
| 66 | 1.3.2.1.3 | Code | 1.5d | 2011-12-13 08:48 | 2011-12-14 13:48 | 65 | 0d |  | dungnm | 12h |
| 67 | 1.3.2.1.4 | Peer code review | 0.5d | 2011-12-14 13:48 | 2011-12-15 08:48 | 66 | 0d |  | dungnm | 4h |
| 68 | 1.3.2.1.5 | Prepare UT script | 0.5d | 2011-12-15 08:48 | 2011-12-15 13:48 | 67 | 0d |  | dungnm | 4h |
| 69 | 1.3.2.1.6 | Perform UT and fix bug | 0.5d | 2011-12-15 13:48 | 2011-12-16 08:48 | 68 | 0d |  | dungnm | 4h |
| 70 | 1.3.2.2 | **Supporting Materials** | 4d | 2011-12-12 08:48 | 2011-12-16 08:48 |  | 12.67d |  | nhanld | 64h |
| 71 | 1.3.2.2.1 | Class, Sequence digaram | 0.5d | 2011-12-12 08:48 | 2011-12-12 13:48 | 64SS | 12.67d | 0d | nhanld | 4h |
| 72 | 1.3.2.2.2 | Prepare for Unit testing | 0.5d | 2011-12-12 13:48 | 2011-12-13 08:48 | 71 | 12.67d | 0d | nhanld | 4h |
| 73 | 1.3.2.2.3 | Code | 1.5d | 2011-12-13 08:48 | 2011-12-14 13:48 | 72 | 12.67d | 0d | nhanld | 12h |
| 74 | 1.3.2.2.4 | Peer code review | 0.5d | 2011-12-14 13:48 | 2011-12-15 08:48 | 73 | 12.67d | 0d | nhanld | 4h |
| 75 | 1.3.2.2.5 | Prepare UT script | 0.5d | 2011-12-15 08:48 | 2011-12-15 13:48 | 74 | 12.67d | 0d | nhanld | 4h |
| 76 | 1.3.2.2.6 | Perform UT and fix bug | 0.5d | 2011-12-15 13:48 | 2011-12-16 08:48 | 75 | 12.67d |  | nhanld | 4h |
| 77 | 1.3.2.3 | **Directorates** | 4d | 2011-12-12 08:48 | 2011-12-16 08:48 |  | 12.67d |  | hungnm | 64h |
| 78 | 1.3.2.3.1 | Class, Sequence digaram | 0.5d | 2011-12-12 08:48 | 2011-12-12 13:48 | 64SS | 12.67d | 0d | hungnm | 4h |
| 79 | 1.3.2.3.2 | Prepare for Unit testing | 0.5d | 2011-12-12 13:48 | 2011-12-13 08:48 | 78 | 12.67d | 0d | hungnm | 4h |
| 80 | 1.3.2.3.3 | Code | 1.5d | 2011-12-13 08:48 | 2011-12-14 13:48 | 79 | 12.67d | 0d | hungnm | 12h |
| 81 | 1.3.2.3.4 | Peer code review | 0.5d | 2011-12-14 13:48 | 2011-12-15 08:48 | 80 | 12.67d | 0d | hungnm | 4h |
| 82 | 1.3.2.3.5 | Prepare UT script | 0.5d | 2011-12-15 08:48 | 2011-12-15 13:48 | 81 | 12.67d | 0d | hungnm | 4h |
| 83 | 1.3.2.3.6 | Perform UT and fix bug | 0.5d | 2011-12-15 13:48 | 2011-12-16 08:48 | 82 | 12.67d |  | hungnm | 4h |
| 84 | 1.3.2.4 | **Department** | 4d | 2011-12-12 08:48 | 2011-12-16 08:48 |  | 12.67d |  | phongtv | 64h |
| 85 | 1.3.2.4.1 | Class, Sequence digaram | 0.5d | 2011-12-12 08:48 | 2011-12-12 13:48 | 64SS | 12.67d | 0d | phongtv | 4h |
| 86 | 1.3.2.4.2 | Prepare for Unit testing | 0.5d | 2011-12-12 13:48 | 2011-12-13 08:48 | 85 | 12.67d | 0d | phongtv | 4h |
| 87 | 1.3.2.4.3 | Code | 1.5d | 2011-12-13 08:48 | 2011-12-14 13:48 | 86 | 12.67d | 0d | phongtv | 12h |
| 88 | 1.3.2.4.4 | Peer code review | 0.5d | 2011-12-14 13:48 | 2011-12-15 08:48 | 87 | 12.67d | 0d | phongtv | 4h |
| 89 | 1.3.2.4.5 | Prepare UT script | 0.5d | 2011-12-15 08:48 | 2011-12-15 13:48 | 88 | 12.67d | 0d | phongtv | 4h |
| 90 | 1.3.2.4.6 | Perform UT and fix bug | 0.5d | 2011-12-15 13:48 | 2011-12-16 08:48 | 89 | 12.67d |  | phongtv | 4h |

Notes:
- 63: (List, Add, Amend)
- 70: (List, Add, Amend, Mark)
- 77: (List, Add, Amend, Mark)
- 84: (List, Add, Amend, Mark)

| ID | WBS | Task | Duration | Start | Finish | Predecessors | Total slack | Free slack | Resources | Work |
| --- | --- | --- | --- | --- | --- | --- | --- | --- | --- | --- |
| 91 | 1.3.2.5 | **Team** | 4d | 2011-12-12 08:48 | 2011-12-16 08:48 |  | 12.67d |  | hant21 | 64h |
| 92 | 1.3.2.5.1 | Class, Sequence digaram | 0.5d | 2011-12-12 08:48 | 2011-12-12 13:48 | 64SS | 12.67d | 0d | hant21 | 4h |
| 93 | 1.3.2.5.2 | Prepare for Unit testing | 0.5d | 2011-12-12 13:48 | 2011-12-13 08:48 | 92 | 12.67d | 0d | hant21 | 4h |
| 94 | 1.3.2.5.3 | Code | 1.5d | 2011-12-13 08:48 | 2011-12-14 13:48 | 93 | 12.67d | 0d | hant21 | 12h |
| 95 | 1.3.2.5.4 | Peer code review | 0.5d | 2011-12-14 13:48 | 2011-12-15 08:48 | 94 | 12.67d | 0d | hant21 | 4h |
| 96 | 1.3.2.5.5 | Prepare UT script | 0.5d | 2011-12-15 08:48 | 2011-12-15 13:48 | 95 | 12.67d | 0d | hant21 | 4h |
| 97 | 1.3.2.5.6 | Perform UT and fix bug | 0.5d | 2011-12-15 13:48 | 2011-12-16 08:48 | 96 | 12.67d |  | hant21 | 4h |
| 98 | 1.3.3 | **Iteration 3 - Login, menu, address lookup, addresslookup,Services, Programme** | 4.5d | 2011-12-15 13:48 | 2011-12-22 08:48 |  | 0.5d |  |  | 320h |
| 99 | 1.3.3.1 | **Logon-Logout, menu** | 4d | 2011-12-16 08:48 | 2011-12-22 08:48 |  | 0d |  | nhanld | 64h |
| 100 | 1.3.3.1.1 | Class, Sequence digaram | 0.5d | 2011-12-16 08:48 | 2011-12-16 13:48 | 69 | 0d |  | nhanld | 4h |
| 101 | 1.3.3.1.2 | Prepare for Unit testing | 0.5d | 2011-12-16 13:48 | 2011-12-19 08:48 | 100 | 0d |  | nhanld | 4h |
| 102 | 1.3.3.1.3 | Code | 1.5d | 2011-12-19 08:48 | 2011-12-20 13:48 | 101 | 0d |  | nhanld | 12h |
| 103 | 1.3.3.1.4 | Peer code review | 0.5d | 2011-12-20 13:48 | 2011-12-21 08:48 | 102 | 0d |  | nhanld | 4h |
| 104 | 1.3.3.1.5 | Prepare UT script | 0.5d | 2011-12-21 08:48 | 2011-12-21 13:48 | 103 | 0d |  | nhanld | 4h |
| 105 | 1.3.3.1.6 | Perform UT and fix bug | 0.5d | 2011-12-21 13:48 | 2011-12-22 08:48 | 104 | 0d |  | nhanld | 4h |
| 106 | 1.3.3.2 | **Type of Business lookup** | 4d | 2011-12-15 13:48 | 2011-12-21 13:48 |  | 9.17d |  | hant21 | 64h |
| 107 | 1.3.3.2.1 | Class, Sequence digaram | 0.5d | 2011-12-15 13:48 | 2011-12-16 08:48 | 69SS | 9.17d | 0d | hant21 | 4h |
| 108 | 1.3.3.2.2 | Prepare for Unit testing | 0.5d | 2011-12-16 08:48 | 2011-12-16 13:48 | 107 | 9.17d | 0d | hant21 | 4h |
| 109 | 1.3.3.2.3 | Code | 1.5d | 2011-12-16 13:48 | 2011-12-20 08:48 | 108 | 9.17d | 0d | hant21 | 12h |
| 110 | 1.3.3.2.4 | Peer code review | 0.5d | 2011-12-20 08:48 | 2011-12-20 13:48 | 109 | 9.17d | 0d | hant21 | 4h |
| 111 | 1.3.3.2.5 | Prepare UT script | 0.5d | 2011-12-20 13:48 | 2011-12-21 08:48 | 110 | 9.17d | 0d | hant21 | 4h |
| 112 | 1.3.3.2.6 | Perform UT and fix bug | 0.5d | 2011-12-21 08:48 | 2011-12-21 13:48 | 111 | 9.17d |  | hant21 | 4h |
| 113 | 1.3.3.3 | **Address lookup** | 4d | 2011-12-15 13:48 | 2011-12-21 13:48 |  | 9.17d |  | nhanld | 64h |
| 114 | 1.3.3.3.1 | Class, Sequence digaram | 0.5d | 2011-12-15 13:48 | 2011-12-16 08:48 | 69SS | 9.17d | 0d | nhanld | 4h |
| 115 | 1.3.3.3.2 | Prepare for Unit testing | 0.5d | 2011-12-16 08:48 | 2011-12-16 13:48 | 114 | 9.17d | 0d | nhanld | 4h |
| 116 | 1.3.3.3.3 | Code | 1.5d | 2011-12-16 13:48 | 2011-12-20 08:48 | 115 | 9.17d | 0d | nhanld | 12h |
| 117 | 1.3.3.3.4 | Peer code review | 0.5d | 2011-12-20 08:48 | 2011-12-20 13:48 | 116 | 9.17d | 0d | nhanld | 4h |
| 118 | 1.3.3.3.5 | Prepare UT script | 0.5d | 2011-12-20 13:48 | 2011-12-21 08:48 | 117 | 9.17d | 0d | nhanld | 4h |
| 119 | 1.3.3.3.6 | Perform UT and fix bug | 0.5d | 2011-12-21 08:48 | 2011-12-21 13:48 | 118 | 9.17d |  | nhanld | 4h |

Notes:
- 91: (List, Add, Amend, Mark)
- 99: Logon logout, menu
- 106: (List, Search)
- 113: (List, Add, Amend)

| ID | WBS | Task | Duration | Start | Finish | Predecessors | Total slack | Free slack | Resources | Work |
| --- | --- | --- | --- | --- | --- | --- | --- | --- | --- | --- |
| 120 | 1.3.3.4 | **Service** | 4d | 2011-12-15 13:48 | 2011-12-21 13:48 |  | 9.17d |  | hungnm | 64h |
| 121 | 1.3.3.4.1 | Class, Sequence digaram | 0.5d | 2011-12-15 13:48 | 2011-12-16 08:48 | 69SS | 9.17d | 0d | hungnm | 4h |
| 122 | 1.3.3.4.2 | Prepare for Unit testing | 0.5d | 2011-12-16 08:48 | 2011-12-16 13:48 | 121 | 9.17d | 0d | hungnm | 4h |
| 123 | 1.3.3.4.3 | Code | 1.5d | 2011-12-16 13:48 | 2011-12-20 08:48 | 122 | 9.17d | 0d | hungnm | 12h |
| 124 | 1.3.3.4.4 | Peer code review | 0.5d | 2011-12-20 08:48 | 2011-12-20 13:48 | 123 | 9.17d | 0d | hungnm | 4h |
| 125 | 1.3.3.4.5 | Prepare UT script | 0.5d | 2011-12-20 13:48 | 2011-12-21 08:48 | 124 | 9.17d | 0d | hungnm | 4h |
| 126 | 1.3.3.4.6 | Perform UT and fix bug | 0.5d | 2011-12-21 08:48 | 2011-12-21 13:48 | 125 | 9.17d |  | hungnm | 4h |
| 127 | 1.3.3.5 | **Programme** | 4d | 2011-12-15 13:48 | 2011-12-21 13:48 |  | 9.17d |  | hungnm | 64h |
| 128 | 1.3.3.5.1 | Class, Sequence digaram | 0.5d | 2011-12-15 13:48 | 2011-12-16 08:48 | 69SS | 9.17d | 0d | hungnm | 4h |
| 129 | 1.3.3.5.2 | Prepare for Unit testing | 0.5d | 2011-12-16 08:48 | 2011-12-16 13:48 | 128 | 9.17d | 0d | hungnm | 4h |
| 130 | 1.3.3.5.3 | Code | 1.5d | 2011-12-16 13:48 | 2011-12-20 08:48 | 129 | 9.17d | 0d | hungnm | 12h |
| 131 | 1.3.3.5.4 | Peer code review | 0.5d | 2011-12-20 08:48 | 2011-12-20 13:48 | 130 | 9.17d | 0d | hungnm | 4h |
| 132 | 1.3.3.5.5 | Prepare UT script | 0.5d | 2011-12-20 13:48 | 2011-12-21 08:48 | 131 | 9.17d | 0d | hungnm | 4h |
| 133 | 1.3.3.5.6 | Perform UT and fix bug | 0.5d | 2011-12-21 08:48 | 2011-12-21 13:48 | 132 | 9.17d |  | hungnm | 4h |
| 134 | 1.3.4 | **Iteration 4 -Premise, Facility, Volunteering, Minor Work Projects** | 8.67d | 2011-12-22 08:48 | 2012-01-03 15:08 |  | 0d |  |  | 480h |
| 135 | 1.3.4.1 | **Premise** | 8d | 2011-12-22 08:48 | 2012-01-03 08:48 |  | 0d |  | nhanld; dungnm | 192h |
| 136 | 1.3.4.1.1 | Class, Sequence digaram | 1d | 2011-12-22 08:48 | 2011-12-23 08:48 | 105 | 0d |  | nhanld | 8h |
| 137 | 1.3.4.1.2 | Prepare for Unit testing | 1d | 2011-12-23 08:48 | 2011-12-26 08:48 | 136 | 0.67d | 0d | nhanld | 8h |
| 138 | 1.3.4.1.3 | Code | 3d | 2011-12-26 08:48 | 2011-12-29 08:48 | 137 | 0.67d | 0d | nhanld | 24h |
| 139 | 1.3.4.1.4 | Peer code review | 1d | 2011-12-29 08:48 | 2011-12-30 08:48 | 138 | 0.67d | 0d | nhanld | 8h |
| 140 | 1.3.4.1.5 | Prepare UT script | 1d | 2011-12-30 08:48 | 2012-01-02 08:48 | 139 | 0.67d | 0d | nhanld | 8h |
| 141 | 1.3.4.1.6 | Perform UT and fix bug | 1d | 2012-01-02 08:48 | 2012-01-03 08:48 | 140 | 0.67d |  | nhanld | 8h |
| 142 | 1.3.4.2 | **Facility** | 4d | 2011-12-22 08:48 | 2011-12-28 08:48 |  | 4.67d |  | hungnm | 64h |
| 143 | 1.3.4.2.1 | Class, Sequence digaram | 0.5d | 2011-12-22 08:48 | 2011-12-22 13:48 | 136SS | 4.67d | 0d | hungnm | 4h |
| 144 | 1.3.4.2.2 | Prepare for Unit testing | 0.5d | 2011-12-22 13:48 | 2011-12-23 08:48 | 143 | 4.67d | 0d | hungnm | 4h |
| 145 | 1.3.4.2.3 | Code | 1.5d | 2011-12-23 08:48 | 2011-12-26 13:48 | 144 | 4.67d | 0d | hungnm | 12h |
| 146 | 1.3.4.2.4 | Peer code review | 0.5d | 2011-12-26 13:48 | 2011-12-27 08:48 | 145 | 4.67d | 0d | hungnm | 4h |
| 147 | 1.3.4.2.5 | Prepare UT script | 0.5d | 2011-12-27 08:48 | 2011-12-27 13:48 | 146 | 4.67d | 0d | hungnm | 4h |
| 148 | 1.3.4.2.6 | Perform UT and fix bug | 0.5d | 2011-12-27 13:48 | 2011-12-28 08:48 | 147 | 4.67d |  | hungnm | 4h |

Notes:
- 120: (List, Add, Amend, Mark)
- 127: (List, Add, Amend, Mark)
- 135: (List, Add, Amend)
- 142: (List, Add, Amend, Mark)

| ID | WBS | Task | Duration | Start | Finish | Predecessors | Total slack | Free slack | Resources | Work |
| --- | --- | --- | --- | --- | --- | --- | --- | --- | --- | --- |
| 149 | 1.3.4.3 | **Volunteering** | 4d | 2011-12-22 08:48 | 2011-12-28 08:48 |  | 4.67d |  | phongtv | 64h |
| 150 | 1.3.4.3.1 | Class, Sequence digaram | 0.5d | 2011-12-22 08:48 | 2011-12-22 13:48 | 136SS | 4.67d | 0d | phongtv | 4h |
| 151 | 1.3.4.3.2 | Prepare for Unit testing | 0.5d | 2011-12-22 13:48 | 2011-12-23 08:48 | 150 | 4.67d | 0d | phongtv | 4h |
| 152 | 1.3.4.3.3 | Code | 1.5d | 2011-12-23 08:48 | 2011-12-26 13:48 | 151 | 4.67d | 0d | phongtv | 12h |
| 153 | 1.3.4.3.4 | Peer code review | 0.5d | 2011-12-26 13:48 | 2011-12-27 08:48 | 152 | 4.67d | 0d | phongtv | 4h |
| 154 | 1.3.4.3.5 | Prepare UT script | 0.5d | 2011-12-27 08:48 | 2011-12-27 13:48 | 153 | 4.67d | 0d | phongtv | 4h |
| 155 | 1.3.4.3.6 | Perform UT and fix bug | 0.5d | 2011-12-27 13:48 | 2011-12-28 08:48 | 154 | 4.67d |  | phongtv | 4h |
| 156 | 1.3.4.4 | **Minor Work Projects** | 4d | 2011-12-22 08:48 | 2011-12-28 08:48 |  | 0d |  | hant21 | 64h |
| 157 | 1.3.4.4.1 | Class, Sequence digaram | 0.5d | 2011-12-22 08:48 | 2011-12-22 13:48 | 136SS | 0d |  | hant21 | 4h |
| 158 | 1.3.4.4.2 | Prepare for Unit testing | 0.5d | 2011-12-22 13:48 | 2011-12-23 08:48 | 157 | 0d |  | hant21 | 4h |
| 159 | 1.3.4.4.3 | Code | 1.5d | 2011-12-23 08:48 | 2011-12-26 13:48 | 158 | 0d |  | hant21 | 12h |
| 160 | 1.3.4.4.4 | Peer code review | 0.5d | 2011-12-26 13:48 | 2011-12-27 08:48 | 159 | 0d |  | hant21 | 4h |
| 161 | 1.3.4.4.5 | Prepare UT script | 0.5d | 2011-12-27 08:48 | 2011-12-27 13:48 | 160 | 0d |  | hant21 | 4h |
| 162 | 1.3.4.4.6 | Perform UT and fix bug | 0.5d | 2011-12-27 13:48 | 2011-12-28 08:48 | 161 | 0d |  | hant21 | 4h |
| 164 | 1.3.4.5 | **Integrate modules** | 4.67d | 2011-12-28 08:48 | 2012-01-03 15:08 |  | 0d |  |  | 96h |
| 165 | 1.3.4.5.1 | Merge modules | 1d | 2011-12-28 08:48 | 2011-12-29 08:48 | 162 | 0d |  | nhanld | 8h |
| 166 | 1.3.4.5.2 | System test | 2.67d | 2011-12-29 08:48 | 2012-01-02 15:08 | 165 | 0d |  | phongtv; hant21; hungnm | 64h |
| 167 | 1.3.4.5.3 | **Help document** | 1d | 2012-01-02 15:08 | 2012-01-03 15:08 |  | 0d |  |  | 24h |
| 168 | 1.3.4.5.3.1 | Write help documents | 1d | 2012-01-02 15:08 | 2012-01-03 15:08 | 166 | 0d |  | phongtv; hant21; hungnm | 24h |

Notes:
- 149: (List, Add, Amend, Mark)
- 156: (List, Add, Amend, Mark)
